# elaboration_project_plan

Schedule from MS Project, 2007-03-01 to 2007-10-31.
Duke University

## Calendars

- Standard: Mon-Fri 08:00-12:00, 13:00-17:00; Sat-Sun off.

## Resources

| Resource |
| --- |
| Patrick |
| Ram |
| Elaborators |
| PriyatamElaborators |
| Development team |
| Pri |
| Priyatam |
| Ramakrishna |
| Kruttik |
| Manav |
| Developers |
| Development teatm |
| BAH |
| Adopters |
| Pryatam |
| Kula |

## Schedule

| ID | WBS | Task | Type | Duration | Start | Finish | Predecessors | Total slack | Free slack | Constraint | Resources | Work |
| --- | --- | --- | --- | --- | --- | --- | --- | --- | --- | --- | --- | --- |
| 1 | 1 | **Iteration 1 (eligibility, study personnel, registration management, multi-site study)** |  | 33d | 2007-03-01 | 2007-04-16 |  | 142d |  |  |  | 21048h |
| 2 | 1.1 | Iteration start | milestone | 0d | 2007-03-01 | 2007-03-01 |  | 142d | 0d | start no earlier than 2007-03-01 |  |  |
| 3 | 1.2 | **Project Management** |  | 30d | 2007-03-01 | 2007-04-11 | 2 | 145d |  |  | Patrick; Adopters; BAH | 2640h |
| 4 | 1.2.1 | **Draft project plan (task 1.1)** |  | 30d | 2007-03-01 | 2007-04-11 |  | 145d |  |  | Patrick; Adopters; BAH | 960h |
| 5 | 1.2.1.1 | Developer draft |  | 5d | 2007-03-01 | 2007-03-07 |  | 150d | 0d |  | Patrick | 40h |
| 6 | 1.2.1.2 | BAH review |  | 5d | 2007-03-08 | 2007-03-14 | 5 | 150d | 0d |  | BAH | 40h |
| 7 | 1.2.1.3 | Developer update |  | 5d | 2007-03-15 | 2007-03-21 | 6 | 150d | 0d |  | Patrick | 40h |
| 8 | 1.2.1.4 | Adopter review |  | 3d | 2007-03-22 | 2007-03-26 | 7 | 150d | 0d |  | Adopters | 24h |
| 9 | 1.2.1.5 | Developer update |  | 2d | 2007-03-27 | 2007-03-28 | 8 | 150d | 0d |  | Patrick | 16h |
| 10 | 1.2.1.6 | Deliver project plan to BAH (task 1.1) | milestone | 0d | 2007-03-28 | 2007-03-28 | 9 | 150d | 0d |  | Patrick |  |
| 11 | 1.2.1.7 | BAH review project plan (task 1.1) |  | 10d | 2007-03-29 | 2007-04-11 | 10 | 150d |  |  | BAH | 80h |
| 12 | 1.2.2 | **Update risk matrix (task 1.3.1)** |  | 20d | 2007-03-01 | 2007-03-28 |  | 145d |  |  | Patrick; BAH | 480h |
| 13 | 1.2.2.1 | Update risk matrix for week 1 |  | 5d | 2007-03-01 | 2007-03-07 |  | 150d | 0d |  | Patrick | 40h |
| 14 | 1.2.2.2 | Update risk matrix for week 2 |  | 5d | 2007-03-08 | 2007-03-14 | 13 | 150d | 0d |  | Patrick | 40h |
| 15 | 1.2.2.3 | Deliver risk matrix to BAH (task 1.3.1) | milestone | 0d | 2007-03-14 | 2007-03-14 | 14 | 150d | 0d |  | Patrick |  |
| 16 | 1.2.2.4 | BAH review risk matrix (task 1.3.1) |  | 10d | 2007-03-15 | 2007-03-28 | 15 | 160d |  |  | BAH | 80h |
| 17 | 1.2.3 | **Monthly report (task 1.3.1)** |  | 20d | 2007-03-15 | 2007-04-11 | 15 | 145d |  |  | Patrick; BAH | 480h |
| 18 | 1.2.3.1 | Update risk matrix for week 3 |  | 5d | 2007-03-15 | 2007-03-21 |  | 150d | 0d |  | Patrick | 40h |
| 19 | 1.2.3.2 | Update risk matrix for week 4 |  | 5d | 2007-03-22 | 2007-03-28 | 18 | 150d | 0d |  | Patrick | 40h |
| 20 | 1.2.3.3 | Deliver monthly report and risk matrix to BAH (task 1.3.1) | milestone | 0d | 2007-03-28 | 2007-03-28 | 19 | 150d | 0d |  | Patrick |  |
| 21 | 1.2.3.4 | BAH review monthly report and risk matrix (task 1.3.1) |  | 10d | 2007-03-29 | 2007-04-11 | 20 | 150d |  |  | BAH | 80h |
| 22 | 1.3 | **Requirements and use cases** |  | 32d | 2007-03-01 | 2007-04-13 | 2 | 142d |  |  | Developers; Adopters; BAH | 4048h |
| 23 | 1.3.1 | **Create level 1 use cases and requirements** |  | 4d | 2007-03-01 | 2007-03-06 |  | 129d | 0d |  | Developers | 288h |
| 24 | 1.3.1.1 | **Level 1 use cases for eligibility** |  | 2d | 2007-03-01 | 2007-03-02 |  | 131d |  |  | Kruttik; Priyatam | 64h |
| 25 | 1.3.1.1.1 | Use case document (task 3.1.1) |  | 1d | 2007-03-01 | 2007-03-01 |  | 121d | 0d |  | Kruttik; Priyatam | 16h |
| 26 | 1.3.1.1.2 | Requirements document (3.2.1) |  | 1d | 2007-03-02 | 2007-03-02 | 25 | 121d |  |  | Kruttik; Priyatam | 16h |

| ID | WBS | Task | Duration | Start | Finish | Predecessors | Total slack | Free slack | Resources | Work |
| --- | --- | --- | --- | --- | --- | --- | --- | --- | --- | --- |
| 27 | 1.3.1.2 | **Level 1 use cases for study personnel** | 2d | 2007-03-01 | 2007-03-02 |  | 131d |  | Priyatam; Kula | 64h |
| 28 | 1.3.1.2.1 | Use case document (task 3.1.1) | 1d | 2007-03-01 | 2007-03-01 |  | 121d | 0d | Priyatam; Kula | 16h |
| 29 | 1.3.1.2.2 | Requirements document (3.2.1) | 1d | 2007-03-02 | 2007-03-02 | 28 | 121d |  | Priyatam; Kula | 16h |
| 30 | 1.3.1.3 | **Level 1 use cases for registration management** | 2d | 2007-03-01 | 2007-03-02 |  | 131d |  | Ramakrishna | 32h |
| 31 | 1.3.1.3.1 | Use case document (task 3.1.1) | 1d | 2007-03-01 | 2007-03-01 |  | 121d | 0d | Ramakrishna | 8h |
| 32 | 1.3.1.3.2 | Requirements document (3.2.1) | 1d | 2007-03-02 | 2007-03-02 | 31 | 121d |  | Ramakrishna | 8h |
| 33 | 1.3.1.4 | **Level 1 use cases for multi-site study** | 4d | 2007-03-01 | 2007-03-06 |  | 129d |  | Manav | 64h |
| 34 | 1.3.1.4.1 | Use case document (task 3.1.1) | 2d | 2007-03-01 | 2007-03-02 |  | 119d | 0d | Manav | 16h |
| 35 | 1.3.1.4.2 | Requirements document (3.2.1) | 2d | 2007-03-05 | 2007-03-06 | 34 | 119d |  | Manav | 16h |
| 36 | 1.3.1.5 | **Level 1 use cases for C3D integration** | 2d | 2007-03-01 | 2007-03-02 |  | 131d |  | Manav | 32h |
| 37 | 1.3.1.5.1 | Use case document (task 3.1.1) | 1d | 2007-03-01 | 2007-03-01 |  | 121d | 0d | Manav | 8h |
| 38 | 1.3.1.5.2 | Requirements document (3.2.1) | 1d | 2007-03-02 | 2007-03-02 | 37 | 121d |  | Manav | 8h |
| 39 | 1.3.2 | **Update use case document (task 3.1.1, task 5.2.1)** | 9d | 2007-03-07 | 2007-03-19 | 23 | 143d | 0d | Developers; Adopters | 1416h |
| 40 | 1.3.2.1 | **Update eligibility use cases** | 9d | 2007-03-07 | 2007-03-19 |  | 143d |  | Kruttik; Adopters; Priyatam | 312h |
| 41 | 1.3.2.1.1 | Developer update | 2d | 2007-03-07 | 2007-03-08 |  | 120d | 0d | Kruttik; Priyatam | 32h |
| 42 | 1.3.2.1.2 | Adopter review | 5d | 2007-03-09 | 2007-03-15 | 41 | 120d | 0d | Adopters | 40h |
| 43 | 1.3.2.1.3 | Developer update | 1d | 2007-03-16 | 2007-03-16 | 42 | 120d | 0d | Kruttik; Priyatam | 16h |
| 44 | 1.3.2.1.4 | Adopter sign-off | 1d | 2007-03-19 | 2007-03-19 | 43 | 120d |  | Adopters | 8h |
| 45 | 1.3.2.2 | **Update study personnel use cases** | 9d | 2007-03-07 | 2007-03-19 |  | 143d |  | Priyatam; Adopters; Kula | 312h |
| 46 | 1.3.2.2.1 | Developer update | 2d | 2007-03-07 | 2007-03-08 |  | 120d | 0d | Priyatam; Kula | 32h |
| 47 | 1.3.2.2.2 | Adopter review | 5d | 2007-03-09 | 2007-03-15 | 46 | 120d | 0d | Adopters | 40h |
| 48 | 1.3.2.2.3 | Developer update | 1d | 2007-03-16 | 2007-03-16 | 47 | 120d | 0d | Priyatam; Kula | 16h |
| 49 | 1.3.2.2.4 | Adopter sign-off | 1d | 2007-03-19 | 2007-03-19 | 48 | 120d |  | Adopters | 8h |
| 50 | 1.3.2.3 | **Update registration management use cases** | 9d | 2007-03-07 | 2007-03-19 |  | 143d |  | Ramakrishna; Adopters | 216h |
| 51 | 1.3.2.3.1 | Developer update | 2d | 2007-03-07 | 2007-03-08 |  | 120d | 0d | Ramakrishna | 16h |
| 52 | 1.3.2.3.2 | Adopter review | 5d | 2007-03-09 | 2007-03-15 | 51 | 120d | 0d | Adopters | 40h |
| 53 | 1.3.2.3.3 | Developer update | 1d | 2007-03-16 | 2007-03-16 | 52 | 120d | 0d | Ramakrishna | 8h |
| 54 | 1.3.2.3.4 | Adopter sign-off | 1d | 2007-03-19 | 2007-03-19 | 53 | 120d |  | Adopters | 8h |

| ID | WBS | Task | Duration | Start | Finish | Predecessors | Total slack | Free slack | Resources | Work |
| --- | --- | --- | --- | --- | --- | --- | --- | --- | --- | --- |
| 55 | 1.3.2.4 | **Update multi-site trial use cases** | 9d | 2007-03-07 | 2007-03-19 |  | 143d |  | Manav; Adopters | 216h |
| 56 | 1.3.2.4.1 | Developer update | 2d | 2007-03-07 | 2007-03-08 |  | 120d | 0d | Manav | 16h |
| 57 | 1.3.2.4.2 | Adopter review | 5d | 2007-03-09 | 2007-03-15 | 56 | 120d | 0d | Adopters | 40h |
| 58 | 1.3.2.4.3 | Developer update | 1d | 2007-03-16 | 2007-03-16 | 57 | 120d | 0d | Manav | 8h |
| 59 | 1.3.2.4.4 | Adopter sign-off | 1d | 2007-03-19 | 2007-03-19 | 58 | 120d |  | Adopters | 8h |
| 60 | 1.3.2.5 | **Update C3D integration use cases** | 9d | 2007-03-07 | 2007-03-19 |  | 143d |  | Manav; Adopters | 216h |
| 61 | 1.3.2.5.1 | Developer update | 2d | 2007-03-07 | 2007-03-08 |  | 120d | 0d | Manav | 16h |
| 62 | 1.3.2.5.2 | Adopter review | 5d | 2007-03-09 | 2007-03-15 | 61 | 120d | 0d | Adopters | 40h |
| 63 | 1.3.2.5.3 | Developer update | 1d | 2007-03-16 | 2007-03-16 | 62 | 120d | 0d | Manav | 8h |
| 64 | 1.3.2.5.4 | Adopter sign-off | 1d | 2007-03-19 | 2007-03-19 | 63 | 120d |  | Adopters | 8h |
| 65 | 1.3.3 | **Update requirements document (task 3.2.1, task 5.3.1)** | 9d | 2007-03-20 | 2007-03-30 | 39 | 143d | 0d | Developers; Adopters | 1416h |
| 66 | 1.3.3.1 | **Update eligibility requirements** | 9d | 2007-03-20 | 2007-03-30 |  | 143d |  | Kruttik; Priyatam; Adopters | 312h |
| 67 | 1.3.3.1.1 | Developer update | 2d | 2007-03-20 | 2007-03-21 |  | 120d | 0d | Kruttik; Priyatam | 32h |
| 68 | 1.3.3.1.2 | Adopter review | 5d | 2007-03-22 | 2007-03-28 | 67 | 120d | 0d | Adopters | 40h |
| 69 | 1.3.3.1.3 | Developer update | 1d | 2007-03-29 | 2007-03-29 | 68 | 120d | 0d | Kruttik; Priyatam | 16h |
| 70 | 1.3.3.1.4 | Adopter sign-off | 1d | 2007-03-30 | 2007-03-30 | 69 | 120d |  | Adopters | 8h |
| 71 | 1.3.3.2 | **Update study personel requirements** | 9d | 2007-03-20 | 2007-03-30 |  | 143d |  | Priyatam; Adopters; Kula | 312h |
| 72 | 1.3.3.2.1 | Developer update | 2d | 2007-03-20 | 2007-03-21 |  | 120d | 0d | Priyatam; Kula | 32h |
| 73 | 1.3.3.2.2 | Adopter review | 5d | 2007-03-22 | 2007-03-28 | 72 | 120d | 0d | Adopters | 40h |
| 74 | 1.3.3.2.3 | Developer update | 1d | 2007-03-29 | 2007-03-29 | 73 | 120d | 0d | Priyatam; Kula | 16h |
| 75 | 1.3.3.2.4 | Adopter sign-off | 1d | 2007-03-30 | 2007-03-30 | 74 | 120d |  | Adopters | 8h |
| 76 | 1.3.3.3 | **Update registration management requirements** | 9d | 2007-03-20 | 2007-03-30 |  | 143d |  | Ramakrishna; Adopters | 216h |
| 77 | 1.3.3.3.1 | Developer update | 2d | 2007-03-20 | 2007-03-21 |  | 120d | 0d | Ramakrishna | 16h |
| 78 | 1.3.3.3.2 | Adopter review | 5d | 2007-03-22 | 2007-03-28 | 77 | 120d | 0d | Adopters | 40h |
| 79 | 1.3.3.3.3 | Developer update | 1d | 2007-03-29 | 2007-03-29 | 78 | 120d | 0d | Ramakrishna | 8h |
| 80 | 1.3.3.3.4 | Adopter sign-off | 1d | 2007-03-30 | 2007-03-30 | 79 | 120d |  | Adopters | 8h |

| ID | WBS | Task | Type | Duration | Start | Finish | Predecessors | Total slack | Free slack | Resources | Work |
| --- | --- | --- | --- | --- | --- | --- | --- | --- | --- | --- | --- |
| 81 | 1.3.3.4 | **Update multi-site trial requirements** |  | 9d | 2007-03-20 | 2007-03-30 |  | 143d |  | Manav; Adopters | 216h |
| 82 | 1.3.3.4.1 | Developer update |  | 2d | 2007-03-20 | 2007-03-21 |  | 120d | 0d | Manav | 16h |
| 83 | 1.3.3.4.2 | Adopter review |  | 5d | 2007-03-22 | 2007-03-28 | 82 | 120d | 0d | Adopters | 40h |
| 84 | 1.3.3.4.3 | Developer update |  | 1d | 2007-03-29 | 2007-03-29 | 83 | 120d | 0d | Manav | 8h |
| 85 | 1.3.3.4.4 | Adopter sign-off |  | 1d | 2007-03-30 | 2007-03-30 | 84 | 120d |  | Adopters | 8h |
| 86 | 1.3.3.5 | **Update C3D integration requirements** |  | 9d | 2007-03-20 | 2007-03-30 |  | 143d |  | Manav; Adopters | 216h |
| 87 | 1.3.3.5.1 | Developer update |  | 2d | 2007-03-20 | 2007-03-21 |  | 120d | 0d | Manav | 16h |
| 88 | 1.3.3.5.2 | Adopter review |  | 5d | 2007-03-22 | 2007-03-28 | 87 | 120d | 0d | Adopters | 40h |
| 89 | 1.3.3.5.3 | Developer update |  | 1d | 2007-03-29 | 2007-03-29 | 88 | 120d | 0d | Manav | 8h |
| 90 | 1.3.3.5.4 | Adopter sign-off |  | 1d | 2007-03-30 | 2007-03-30 | 89 | 120d |  | Adopters | 8h |
| 91 | 1.3.4 | Developer deliver use case document to BAH (task 3.1.1, task 5.2.1) | milestone | 0d | 2007-03-30 | 2007-03-30 | 65 | 120d | 0d | Patrick |  |
| 92 | 1.3.5 | BAH review use case document (task 3.1.1, task 5.2.1) |  | 10d | 2007-04-02 | 2007-04-13 | 91 | 120d |  | BAH | 80h |
| 93 | 1.3.6 | Developer deliver requirements document to BAH (task 3.2.1, task 5.3.1) | milestone | 0d | 2007-03-30 | 2007-03-30 | 65 | 120d | 0d | Patrick |  |
| 94 | 1.3.7 | BAH review requirements document (task 3.2.1, task 5.3.1) |  | 10d | 2007-04-02 | 2007-04-13 | 93 | 120d |  | BAH | 80h |
| 95 | 1.4 | **Analysis and Design** |  | 29d | 2007-03-07 | 2007-04-16 | 23, 2 | 142d |  | Developers; Adopters; BAH | 4248h |
| 96 | 1.4.1 | **Perform level 1 design** |  | 2d | 2007-03-07 | 2007-03-08 |  | 142d | 0d | Developers | 48h |
| 97 | 1.4.1.1 | Cursory BRIDG harmonization |  | 1d | 2007-03-07 | 2007-03-07 |  | 115d | 0d | Developers | 8h |
| 98 | 1.4.1.2 | Update implementation model |  | 1d | 2007-03-08 | 2007-03-08 | 97 | 115d |  | Developers | 8h |
| 99 | 1.4.1.3 | Cursory system design |  | 2d | 2007-03-07 | 2007-03-08 |  | 115d |  | Developers | 16h |
| 100 | 1.4.2 | **Modeling (task 3.3.1)** |  | 27d | 2007-03-09 | 2007-04-16 | 96 | 142d |  | Developers; Adopters | 1104h |
| 101 | 1.4.2.1 | **Update model** |  | 6d | 2007-03-09 | 2007-03-16 |  | 142d | 0d | Developers | 264h |
| 102 | 1.4.2.1.1 | **BRIDG harmonization** |  | 3d | 2007-03-09 | 2007-03-13 | 96 | 142d | 0d |  | 96h |
| 103 | 1.4.2.1.1.1 | Harmonize Study model |  | 2d | 2007-03-09 | 2007-03-12 |  | 120d |  | Kruttik; Priyatam; Manav | 48h |
| 104 | 1.4.2.1.1.2 | Harmonize Personnel model |  | 3d | 2007-03-09 | 2007-03-13 |  | 119d |  | Ramakrishna | 24h |
| 105 | 1.4.2.1.1.3 | Harmonize Multi-site Study model |  | 3d | 2007-03-09 | 2007-03-13 |  | 119d |  | Manav | 24h |

| ID | WBS | Task | Type | Duration | Start | Finish | Predecessors | Total slack | Free slack | Resources | Work |
| --- | --- | --- | --- | --- | --- | --- | --- | --- | --- | --- | --- |
| 106 | 1.4.2.1.2 | **Model implementation** |  | 3d | 2007-03-14 | 2007-03-16 | 102 | 142d |  |  | 120h |
| 107 | 1.4.2.1.2.1 | Implement Study model |  | 3d | 2007-03-14 | 2007-03-16 |  | 119d |  | Kruttik; Priyatam; Manav | 72h |
| 108 | 1.4.2.1.2.2 | Implement Personnel model |  | 3d | 2007-03-14 | 2007-03-16 |  | 119d |  | Ramakrishna | 24h |
| 109 | 1.4.2.1.2.3 | Implement Multi-site Study model |  | 3d | 2007-03-14 | 2007-03-16 |  | 119d |  | Manav | 24h |
| 110 | 1.4.2.2 | Adopter review |  | 5d | 2007-03-19 | 2007-03-23 | 101 | 142d | 0d | Adopters | 40h |
| 111 | 1.4.2.3 | **Update model** |  | 6d | 2007-03-26 | 2007-04-02 | 110 | 142d | 0d | Developers | 288h |
| 112 | 1.4.2.3.1 | **BRIDG harmonization** |  | 3d | 2007-03-26 | 2007-03-28 | 110 | 142d | 0d |  | 120h |
| 113 | 1.4.2.3.1.1 | Harmonize Study model |  | 3d | 2007-03-26 | 2007-03-28 |  | 119d |  | Kruttik; Priyatam; Manav | 72h |
| 114 | 1.4.2.3.1.2 | Harmonize Personnel model |  | 3d | 2007-03-26 | 2007-03-28 |  | 119d |  | Ramakrishna | 24h |
| 115 | 1.4.2.3.1.3 | Harmonize Multi-site Study model |  | 3d | 2007-03-26 | 2007-03-28 |  | 119d |  | Manav | 24h |
| 116 | 1.4.2.3.2 | **Model implementation** |  | 3d | 2007-03-29 | 2007-04-02 | 112 | 142d |  |  | 120h |
| 117 | 1.4.2.3.2.1 | Implement Study model |  | 3d | 2007-03-29 | 2007-04-02 |  | 119d |  | Kruttik; Priyatam; Manav | 72h |
| 118 | 1.4.2.3.2.2 | Implement Personnel model |  | 3d | 2007-03-29 | 2007-04-02 |  | 119d |  | Ramakrishna | 24h |
| 119 | 1.4.2.3.2.3 | Implement Multi-site Study model |  | 3d | 2007-03-29 | 2007-04-02 |  | 119d |  | Manav | 24h |
| 120 | 1.4.2.4 | Developer deliver UML to BAH (task 3.3.1) | milestone | 0d | 2007-04-02 | 2007-04-02 | 111 | 142d | 0d | Patrick |  |
| 121 | 1.4.2.5 | BAH review of UML (task 3.3.1) |  | 10d | 2007-04-03 | 2007-04-16 | 120 | 142d |  | BAH | 80h |
| 122 | 1.4.3 | **System design (task 3.4.1)** |  | 25d | 2007-03-09 | 2007-04-12 | 96 | 144d |  | Developers; BAH | 2160h |
| 123 | 1.4.3.1 | **Design eligibility** |  | 15d | 2007-03-09 | 2007-03-29 |  | 154d |  | Kruttik; Priyatam | 480h |
| 124 | 1.4.3.1.1 | Draft UML |  | 5d | 2007-03-09 | 2007-03-15 |  | 121d | 0d | Kruttik; Priyatam | 80h |
| 125 | 1.4.3.1.2 | Team review |  | 5d | 2007-03-16 | 2007-03-22 | 124 | 121d | 0d | Kruttik; Priyatam | 80h |
| 126 | 1.4.3.1.3 | Update design document |  | 5d | 2007-03-23 | 2007-03-29 | 125 | 121d |  | Kruttik; Priyatam | 80h |
| 127 | 1.4.3.2 | **Design personnel** |  | 15d | 2007-03-09 | 2007-03-29 |  | 154d |  | Priyatam; Kula | 480h |
| 128 | 1.4.3.2.1 | Draft UML |  | 5d | 2007-03-09 | 2007-03-15 |  | 121d | 0d | Priyatam; Kula | 80h |
| 129 | 1.4.3.2.2 | Team review |  | 5d | 2007-03-16 | 2007-03-22 | 128 | 121d | 0d | Priyatam; Kula | 80h |
| 130 | 1.4.3.2.3 | Update design document |  | 5d | 2007-03-23 | 2007-03-29 | 129 | 121d |  | Priyatam; Kula | 80h |

| ID | WBS | Task | Type | Duration | Start | Finish | Predecessors | Total slack | Free slack | Resources | Work |
| --- | --- | --- | --- | --- | --- | --- | --- | --- | --- | --- | --- |
| 131 | 1.4.3.3 | **Design registration management** |  | 15d | 2007-03-09 | 2007-03-29 |  | 154d |  | Ramakrishna | 240h |
| 132 | 1.4.3.3.1 | Draft UML |  | 5d | 2007-03-09 | 2007-03-15 |  | 131d | 0d | Ramakrishna | 40h |
| 133 | 1.4.3.3.2 | Team review |  | 5d | 2007-03-16 | 2007-03-22 | 132 | 131d | 0d | Ramakrishna | 40h |
| 134 | 1.4.3.3.3 | Update design document |  | 5d | 2007-03-23 | 2007-03-29 | 133 | 131d |  | Ramakrishna | 40h |
| 135 | 1.4.3.4 | **Design multi-site study** |  | 15d | 2007-03-09 | 2007-03-29 |  | 154d |  | Manav | 240h |
| 136 | 1.4.3.4.1 | Draft UML |  | 5d | 2007-03-09 | 2007-03-15 |  | 106d | 0d | Manav | 40h |
| 137 | 1.4.3.4.2 | Team review |  | 5d | 2007-03-16 | 2007-03-22 | 136 | 106d | 0d | Manav | 40h |
| 138 | 1.4.3.4.3 | Update design document |  | 5d | 2007-03-23 | 2007-03-29 | 137 | 106d |  | Manav | 40h |
| 139 | 1.4.3.5 | **Design C3D integration** |  | 15d | 2007-03-09 | 2007-03-29 |  | 144d | 0d | Manav | 240h |
| 140 | 1.4.3.5.1 | Draft UML |  | 5d | 2007-03-09 | 2007-03-15 |  | 144d | 0d | Manav | 40h |
| 141 | 1.4.3.5.2 | Team review |  | 5d | 2007-03-16 | 2007-03-22 | 140 | 144d | 0d | Manav | 40h |
| 142 | 1.4.3.5.3 | Update design document |  | 5d | 2007-03-23 | 2007-03-29 | 141 | 144d |  | Manav | 40h |
| 143 | 1.4.3.6 | Deliver design doc to BAH (task 3.4.1) | milestone | 0d | 2007-03-29 | 2007-03-29 | 139 | 144d | 0d | Patrick |  |
| 144 | 1.4.3.7 | BAH review design doc (task 3.4.1) |  | 10d | 2007-03-30 | 2007-04-12 | 143 | 144d |  | BAH | 80h |
| 145 | 1.4.4 | **Research** |  | 10d | 2007-03-09 | 2007-03-22 | 96 | 159d |  | Manav | 240h |
| 146 | 1.4.4.1 | **Investigate C3D integration** |  | 10d | 2007-03-09 | 2007-03-22 | 96 | 159d |  | Manav | 160h |
| 147 | 1.4.4.1.1 | Review release 1 code |  | 5d | 2007-03-09 | 2007-03-15 |  | 136d | 0d | Manav | 40h |
| 148 | 1.4.4.1.2 | Review release 1 security model |  | 5d | 2007-03-16 | 2007-03-22 | 147 | 136d |  | Manav | 40h |
| 149 | 1.5 | **Implementation (task 3.5.1)** |  | 25d | 2007-03-09 | 2007-04-12 | 96, 2 | 144d |  | Developers; BAH | 2976h |
| 150 | 1.5.1 | **Database layer** |  | 6d | 2007-03-09 | 2007-03-16 |  | 144d | 9d | Developers | 424h |
| 151 | 1.5.1.1 | **Eligibility model** |  | 4d | 2007-03-09 | 2007-03-14 |  | 153d | 0d | Kruttik; Priyatam | 112h |
| 152 | 1.5.1.1.1 | Create DDLs |  | 1d | 2007-03-09 | 2007-03-09 |  | 130d | 0d | Kruttik; Priyatam | 16h |
| 153 | 1.5.1.1.2 | Apply to database |  | 1d | 2007-03-12 | 2007-03-12 | 152 | 130d | 0d | Kruttik; Priyatam | 16h |
| 154 | 1.5.1.1.3 | Create test data |  | 1d | 2007-03-13 | 2007-03-13 | 153 | 130d | 0d | Kruttik; Priyatam | 16h |
| 155 | 1.5.1.1.4 | Create data access objects (DAOs) |  | 1d | 2007-03-14 | 2007-03-14 | 154 | 130d |  |  |  |

| ID | WBS | Task | Duration | Start | Finish | Predecessors | Total slack | Free slack | Resources | Work |
| --- | --- | --- | --- | --- | --- | --- | --- | --- | --- | --- |
| 156 | 1.5.1.2 | **Study personnel** | 6d | 2007-03-09 | 2007-03-16 |  | 152d | 0d | Priyatam; Kula | 176h |
| 157 | 1.5.1.2.1 | Investigate how to implement Person with Role | 2d | 2007-03-09 | 2007-03-12 |  | 129d | 0d | Priyatam; Kula | 32h |
| 158 | 1.5.1.2.2 | Create DDLs | 1d | 2007-03-13 | 2007-03-13 | 157 | 129d | 0d | Priyatam; Kula | 16h |
| 159 | 1.5.1.2.3 | Apply to database | 1d | 2007-03-14 | 2007-03-14 | 158 | 129d | 0d | Priyatam; Kula | 16h |
| 160 | 1.5.1.2.4 | Create test data | 1d | 2007-03-15 | 2007-03-15 | 159 | 129d | 0d | Priyatam; Kula | 16h |
| 161 | 1.5.1.2.5 | Create data access objects (DAOs) | 1d | 2007-03-16 | 2007-03-16 | 160 | 129d |  |  |  |
| 162 | 1.5.1.3 | **Multi-site** | 4d | 2007-03-09 | 2007-03-14 |  | 144d | 0d | Manav | 56h |
| 163 | 1.5.1.3.1 | Create DDLs | 1d | 2007-03-09 | 2007-03-09 |  | 121d | 0d | Manav | 8h |
| 164 | 1.5.1.3.2 | Apply to database | 1d | 2007-03-12 | 2007-03-12 | 163 | 121d | 0d | Manav | 8h |
| 165 | 1.5.1.3.3 | Create test data | 1d | 2007-03-13 | 2007-03-13 | 164 | 121d | 0d | Manav | 8h |
| 166 | 1.5.1.3.4 | Create data access objects (DAOs) | 1d | 2007-03-14 | 2007-03-14 | 165 | 121d |  |  |  |
| 167 | 1.5.1.4 | Unit testing | 4d | 2007-03-09 | 2007-03-14 |  | 132d |  | Developers | 32h |
| 168 | 1.5.2 | **Deployment** | 2d | 2007-03-15 | 2007-03-16 |  | 153d | 9d | Manav | 32h |
| 169 | 1.5.2.1 | Deploy a second C3PR for multi-site testing | 2d | 2007-03-15 | 2007-03-16 | 162 | 130d |  | Manav | 16h |
| 170 | 1.5.3 | **Business layer** | 12d | 2007-03-09 | 2007-03-26 |  | 148d |  | Developers | 720h |
| 171 | 1.5.3.1 | **Implement eligibility APIs** | 7d | 2007-03-15 | 2007-03-23 | 151 | 153d | 0d | Kruttik; Priyatam | 224h |
| 172 | 1.5.3.1.1 | Design APIs | 2d | 2007-03-15 | 2007-03-16 |  | 130d | 0d | Kruttik; Priyatam | 32h |
| 173 | 1.5.3.1.2 | Implement APIs | 3d | 2007-03-19 | 2007-03-21 | 172 | 130d | 0d | Kruttik; Priyatam | 48h |
| 174 | 1.5.3.1.3 | Deploy APIs | 2d | 2007-03-22 | 2007-03-23 | 173 | 130d |  | Kruttik; Priyatam | 32h |
| 175 | 1.5.3.2 | **Implement study personnel APIs** | 6d | 2007-03-19 | 2007-03-26 | 156 | 152d | 0d | Ramakrishna | 96h |
| 176 | 1.5.3.2.1 | Design APIs | 2d | 2007-03-19 | 2007-03-20 |  | 129d | 0d | Ramakrishna | 16h |
| 177 | 1.5.3.2.2 | Implement APIs | 3d | 2007-03-21 | 2007-03-23 | 176 | 129d | 0d | Ramakrishna | 24h |
| 178 | 1.5.3.2.3 | Deploy APIs | 1d | 2007-03-26 | 2007-03-26 | 177 | 129d |  | Ramakrishna | 8h |
| 179 | 1.5.3.3 | **Implement C3PR registration APIs** | 6d | 2007-03-15 | 2007-03-22 | 162 | 144d | 0d | Manav | 96h |
| 180 | 1.5.3.3.1 | Design APIs | 2d | 2007-03-15 | 2007-03-16 |  | 121d | 0d | Manav | 16h |
| 181 | 1.5.3.3.2 | Implement APIs | 3d | 2007-03-19 | 2007-03-21 | 180 | 121d | 0d | Manav | 24h |
| 182 | 1.5.3.3.3 | Deploy APIs | 1d | 2007-03-22 | 2007-03-22 | 181 | 121d |  | Manav | 8h |

| ID | WBS | Task | Type | Duration | Start | Finish | Predecessors | Total slack | Free slack | Resources | Work |
| --- | --- | --- | --- | --- | --- | --- | --- | --- | --- | --- | --- |
| 183 | 1.5.3.4 | **Business rules** |  | 5d | 2007-03-09 | 2007-03-15 |  | 158d |  | Ramakrishna | 160h |
| 184 | 1.5.3.4.1 | Duplicate registrations |  | 5d | 2007-03-09 | 2007-03-15 |  | 135d | 0d | Ramakrishna | 40h |
| 185 | 1.5.3.4.2 | Duplicate subjects |  | 5d | 2007-03-09 | 2007-03-15 |  | 141d |  | Ramakrishna | 40h |
| 186 | 1.5.3.4.3 | Duplicate studies |  | 5d | 2007-03-09 | 2007-03-15 |  | 141d |  | Ramakrishna | 40h |
| 187 | 1.5.3.5 | Unit testing |  | 6d | 2007-03-16 | 2007-03-23 | 184 | 135d |  | Developers | 48h |
| 188 | 1.5.4 | **ESB** |  | 5d | 2007-03-23 | 2007-03-29 | 179 | 144d | 0d | Manav | 120h |
| 189 | 1.5.4.1 | Implement inbound-binding component for C3PR registration |  | 5d | 2007-03-23 | 2007-03-29 |  | 121d |  | Manav | 40h |
| 190 | 1.5.4.2 | Unit testing |  | 5d | 2007-03-23 | 2007-03-29 |  | 121d |  | Developers | 40h |
| 191 | 1.5.5 | **Web interface** |  | 17d | 2007-03-09 | 2007-04-02 |  | 152d |  | Developers | 960h |
| 192 | 1.5.5.1 | **Modify study management interface** |  | 6d | 2007-03-23 | 2007-03-30 |  | 153d |  | Kruttik; Priyatam; Manav | 384h |
| 193 | 1.5.5.1.1 | Manage eligibility criteria |  | 5d | 2007-03-26 | 2007-03-30 | 171 | 130d |  | Kruttik; Priyatam; Manav | 120h |
| 194 | 1.5.5.1.2 | Manage multi-site study |  | 5d | 2007-03-23 | 2007-03-29 | 179 | 131d |  | Kruttik; Priyatam; Manav | 120h |
| 195 | 1.5.5.2 | **Modify study personnel management interface** |  | 5d | 2007-03-27 | 2007-04-02 |  | 152d |  | Priyatam; Kula | 160h |
| 196 | 1.5.5.2.1 | Manage study personnel |  | 5d | 2007-03-27 | 2007-04-02 | 175 | 129d |  | Priyatam; Kula | 80h |
| 197 | 1.5.5.3 | **Modify registration interface** |  | 5d | 2007-03-26 | 2007-03-30 |  | 153d |  | Kruttik; Priyatam | 160h |
| 198 | 1.5.5.3.1 | Check eligibility |  | 5d | 2007-03-26 | 2007-03-30 | 171 | 130d |  | Kruttik; Priyatam | 80h |
| 199 | 1.5.5.4 | **Modify registration management interface** |  | 5d | 2007-03-09 | 2007-03-15 |  | 164d |  | Ramakrishna | 80h |
| 200 | 1.5.5.4.1 | Manage study subject registration |  | 5d | 2007-03-09 | 2007-03-15 |  | 141d |  | Ramakrishna | 40h |
| 201 | 1.5.5.5 | Unit testing |  | 5d | 2007-03-09 | 2007-03-15 |  | 141d |  | Developers | 40h |
| 202 | 1.5.6 | **Installer** |  | 15d | 2007-03-09 | 2007-03-29 |  | 154d |  | Kruttik | 240h |
| 203 | 1.5.6.1 | Externalize properties |  | 5d | 2007-03-09 | 2007-03-15 |  | 131d | 0d | Kruttik | 40h |
| 204 | 1.5.6.2 | Apply DDLs via ant |  | 5d | 2007-03-16 | 2007-03-22 | 203 | 131d | 0d | Kruttik | 40h |
| 205 | 1.5.6.3 | Make WAR file |  | 5d | 2007-03-23 | 2007-03-29 | 204 | 131d |  | Kruttik | 40h |
| 206 | 1.5.7 | Deliver codebase to BAH (task 3.5.1) | milestone | 0d | 2007-03-29 | 2007-03-29 | 150, 188, 168 | 121d | 0d | Patrick |  |
| 207 | 1.5.8 | BAH review codebase (task 3.5.1) |  | 10d | 2007-03-30 | 2007-04-12 | 206 | 121d |  | BAH | 80h |

| ID | WBS | Task | Type | Duration | Start | Finish | Predecessors | Total slack | Free slack | Resources | Work |
| --- | --- | --- | --- | --- | --- | --- | --- | --- | --- | --- | --- |
| 208 | 1.6 | **Testing** |  | 30d | 2007-03-01 | 2007-04-11 | 2 | 145d |  | Developers; Adopters; BAH | 4952h |
| 209 | 1.6.1 | **Developer testing** |  | 30d | 2007-03-01 | 2007-04-11 |  | 145d |  | BAH; Adopters; Developers | 1968h |
| 210 | 1.6.1.1 | **Update developer test plan (task 3.6.1, task 5.4.1)** |  | 30d | 2007-03-01 | 2007-04-11 |  | 145d |  | Developers; Adopters; BAH | 960h |
| 211 | 1.6.1.1.1 | Developer draft |  | 5d | 2007-03-01 | 2007-03-07 |  | 122d | 0d | Developers | 40h |
| 212 | 1.6.1.1.2 | Adopter review |  | 5d | 2007-03-08 | 2007-03-14 | 211 | 122d | 0d | Adopters | 40h |
| 213 | 1.6.1.1.3 | Developer update |  | 5d | 2007-03-15 | 2007-03-21 | 212 | 122d | 0d | Developers | 40h |
| 214 | 1.6.1.1.4 | Adopter review and sign |  | 5d | 2007-03-22 | 2007-03-28 | 213 | 122d | 0d | Adopters | 40h |
| 215 | 1.6.1.1.5 | Deliver signed test plan to BAH (task 3.6.1, task 5.4.1) | milestone | 0d | 2007-03-28 | 2007-03-28 | 214 | 122d | 0d | Patrick |  |
| 216 | 1.6.1.1.6 | BAH review signed test plan (task 3.6.1, task 5.4.1) |  | 10d | 2007-03-29 | 2007-04-11 | 215 | 122d |  | BAH | 80h |
| 217 | 1.6.1.2 | **Integration and system testing (task 3.8.1)** |  | 10d | 2007-03-23 | 2007-04-05 | 211, 206FS-5d | 149d |  | Developers; BAH | 288h |
| 218 | 1.6.1.2.1 | Generate test data |  | 1d | 2007-03-23 | 2007-03-23 |  | 135d |  | Developers | 8h |
| 219 | 1.6.1.2.2 | Write tests |  | 3d | 2007-03-23 | 2007-03-27 |  | 131d | 0d | Developers | 24h |
| 220 | 1.6.1.2.3 | Validate tests |  | 1d | 2007-03-28 | 2007-03-28 | 219 | 131d | 0d | Developers | 8h |
| 221 | 1.6.1.2.4 | Generate test report |  | 1d | 2007-03-29 | 2007-03-29 | 220 | 131d |  | Developers | 8h |
| 222 | 1.6.1.2.5 | Deliver test report to BAH (task 3.8.1) | milestone | 0d | 2007-03-23 | 2007-03-23 |  | 136d |  | Patrick |  |
| 223 | 1.6.1.2.6 | BAH review test report (task 3.8.1) |  | 10d | 2007-03-23 | 2007-04-05 |  | 126d |  | BAH | 80h |
| 224 | 1.6.2 | **Adopter testing** |  | 30d | 2007-03-01 | 2007-04-11 |  | 145d |  | Adopters; Developers; BAH | 2264h |
| 225 | 1.6.2.1 | **Update adopter test plan (task 5.5.1)** |  | 30d | 2007-03-01 | 2007-04-11 |  | 145d |  | Adopters; Developers; BAH | 1000h |
| 226 | 1.6.2.1.1 | Adopter update test script |  | 5d | 2007-03-01 | 2007-03-07 |  | 122d | 0d | Adopters | 40h |
| 227 | 1.6.2.1.2 | Adopter update test approach |  | 5d | 2007-03-08 | 2007-03-14 | 226 | 122d | 0d | Adopters | 40h |
| 228 | 1.6.2.1.3 | Developer review |  | 5d | 2007-03-15 | 2007-03-21 | 227 | 122d | 0d | Patrick; Ram | 80h |
| 229 | 1.6.2.1.4 | Adopter update |  | 5d | 2007-03-22 | 2007-03-28 | 228 | 122d | 0d | Adopters | 40h |
| 230 | 1.6.2.1.5 | Developer deliver adopter test plan to BAH (task 5.5.1) | milestone | 0d | 2007-03-28 | 2007-03-28 | 229 | 122d | 0d | Patrick |  |
| 231 | 1.6.2.1.6 | BAH review adopter test plan (task 5.5.1) |  | 10d | 2007-03-29 | 2007-04-11 | 230 | 122d |  | BAH | 80h |

| ID | WBS | Task | Type | Duration | Start | Finish | Predecessors | Total slack | Free slack | Resources | Work |
| --- | --- | --- | --- | --- | --- | --- | --- | --- | --- | --- | --- |
| 232 | 1.6.2.2 | **Functional testing (task 5.6.1)** |  | 22d | 2007-03-08 | 2007-04-06 | 226 | 148d |  | Adopters; BAH | 544h |
| 233 | 1.6.2.2.1 | Adopter create test data |  | 5d | 2007-03-08 | 2007-03-14 |  | 125d | 0d | Adopters | 40h |
| 234 | 1.6.2.2.2 | Adopter perform test script |  | 5d | 2007-03-15 | 2007-03-21 | 233 | 125d | 0d | Adopters | 40h |
| 235 | 1.6.2.2.3 | Adopter document results |  | 2d | 2007-03-22 | 2007-03-23 | 234 | 125d | 0d | Adopters | 16h |
| 236 | 1.6.2.2.4 | Adopter log bugs |  | 2d | 2007-03-26 | 2007-03-27 | 235 | 133d |  | Adopters | 16h |
| 237 | 1.6.2.2.5 | Developer deliver adopter test report to BAH (task 5.6.1) | milestone | 0d | 2007-03-23 | 2007-03-23 | 235 | 125d | 0d | Patrick |  |
| 238 | 1.6.2.2.6 | BAH review adopter test report (task 5.6.1) |  | 10d | 2007-03-26 | 2007-04-06 | 237 | 125d |  | BAH | 80h |
| 239 | 1.7 | **Documentation** |  | 15d | 2007-03-23 | 2007-04-12 | 2 | 144d |  | Developers; Adopters; BAH | 1656h |
| 240 | 1.7.1 | **Installation guide (task 3.10.1)** |  | 13d | 2007-03-27 | 2007-04-12 | 206FS-3d | 144d |  | Developers; BAH | 312h |
| 241 | 1.7.1.1 | Update installation guide |  | 3d | 2007-03-27 | 2007-03-29 |  | 121d | 0d | Developers | 24h |
| 242 | 1.7.1.2 | Deliver installation guide to BAH (task 3.10.1) | milestone | 0d | 2007-03-29 | 2007-03-29 | 241 | 121d | 0d | Patrick |  |
| 243 | 1.7.1.3 | BAH review of installation guide (task 3.10.1) |  | 10d | 2007-03-30 | 2007-04-12 | 242 | 121d |  | BAH | 80h |
| 244 | 1.7.2 | **Administration guide (task 3.13.1)** |  | 13d | 2007-03-27 | 2007-04-12 | 206FS-3d | 144d |  | Developers; BAH | 312h |
| 245 | 1.7.2.1 | Update administration guide |  | 3d | 2007-03-27 | 2007-03-29 |  | 121d | 0d | Developers | 24h |
| 246 | 1.7.2.2 | Deliver administration guide to BAH (task 3.13.1) | milestone | 0d | 2007-03-29 | 2007-03-29 | 245 | 121d | 0d | Patrick |  |
| 247 | 1.7.2.3 | BAH review of administration guide (task 3.13.1) |  | 10d | 2007-03-30 | 2007-04-12 | 246 | 121d |  | BAH | 80h |
| 248 | 1.7.3 | **Release notes (task 3.14.1)** |  | 13d | 2007-03-27 | 2007-04-12 | 206FS-3d | 144d |  | Developers; BAH | 312h |
| 249 | 1.7.3.1 | Update release notes |  | 3d | 2007-03-27 | 2007-03-29 |  | 121d | 0d | Developers | 24h |
| 250 | 1.7.3.2 | Deliver release notes to BAH (task 3.14.1) | milestone | 0d | 2007-03-29 | 2007-03-29 | 249 | 121d | 0d | Patrick |  |
| 251 | 1.7.3.3 | BAH review of release notes (task 3.14.1) |  | 10d | 2007-03-30 | 2007-04-12 | 250 | 121d |  | BAH | 80h |
| 252 | 1.7.4 | **Adopter summary of C3PR (task 5.1.1)** |  | 15d | 2007-03-23 | 2007-04-12 | 206FS-5d | 144d |  | Adopters; BAH | 360h |
| 253 | 1.7.4.1 | Adopter update summary |  | 3d | 2007-03-23 | 2007-03-27 |  | 121d | 0d | Adopters | 24h |
| 254 | 1.7.4.2 | Developer review summary |  | 1d | 2007-03-28 | 2007-03-28 | 253 | 121d | 0d | Developers | 8h |
| 255 | 1.7.4.3 | Adopter update summary |  | 1d | 2007-03-29 | 2007-03-29 | 254 | 121d | 0d | Adopters | 8h |
| 256 | 1.7.4.4 | Developer deliver C3PR summary to BAH (task 5.1.1) | milestone | 0d | 2007-03-29 | 2007-03-29 | 255 | 121d | 0d | Patrick |  |
| 257 | 1.7.4.5 | BAH review of C3PR summary (task 5.1.1) |  | 10d | 2007-03-30 | 2007-04-12 | 256 | 121d |  | BAH | 80h |

| ID | WBS | Task | Type | Duration | Start | Finish | Predecessors | Total slack | Free slack | Constraint | Resources | Work |
| --- | --- | --- | --- | --- | --- | --- | --- | --- | --- | --- | --- | --- |
| 258 | 1.8 | **Support** |  | 22d | 2007-03-01 | 2007-03-30 | 2 | 153d |  |  | Developers | 528h |
| 259 | 1.8.1 | Adopter support |  | 22d | 2007-03-01 | 2007-03-30 |  | 130d |  |  | Developers | 176h |
| 260 | 1.8.2 | Bug fixing |  | 22d | 2007-03-01 | 2007-03-30 |  | 130d |  |  | Developers | 176h |
| 261 | 2 | **Iteration 2 (eligibility, study personnel/security, C3D integration, multi-site study)** |  | 35d | 2007-04-02 | 2007-05-18 |  | 118d |  |  |  | 20400h |
| 262 | 2.1 | Iteration start | milestone | 0d | 2007-04-02 | 2007-04-02 |  | 95d | 0d | start no earlier than 2007-04-02 |  |  |
| 263 | 2.2 | **Project Management** |  | 30d | 2007-04-02 | 2007-05-11 | 262 | 123d |  |  | Patrick; Adopters; BAH | 2640h |
| 264 | 2.2.1 | **Draft project plan (task 1.1)** |  | 30d | 2007-04-02 | 2007-05-11 |  | 123d |  |  | Patrick; Adopters; BAH | 960h |
| 265 | 2.2.1.1 | Developer draft |  | 5d | 2007-04-02 | 2007-04-06 |  | 100d | 0d |  | Patrick | 40h |
| 266 | 2.2.1.2 | BAH review |  | 5d | 2007-04-09 | 2007-04-13 | 265 | 100d | 0d |  | BAH | 40h |
| 267 | 2.2.1.3 | Developer update |  | 5d | 2007-04-16 | 2007-04-20 | 266 | 100d | 0d |  | Patrick | 40h |
| 268 | 2.2.1.4 | Adopter review |  | 3d | 2007-04-23 | 2007-04-25 | 267 | 100d | 0d |  | Adopters | 24h |
| 269 | 2.2.1.5 | Developer update |  | 2d | 2007-04-26 | 2007-04-27 | 268 | 100d | 0d |  | Patrick | 16h |
| 270 | 2.2.1.6 | Deliver project plan to BAH (task 1.1) | milestone | 0d | 2007-04-27 | 2007-04-27 | 269 | 100d | 0d |  | Patrick |  |
| 271 | 2.2.1.7 | BAH review project plan (task 1.1) |  | 10d | 2007-04-30 | 2007-05-11 | 270 | 100d |  |  | BAH | 80h |
| 272 | 2.2.2 | **Update risk matrix (task 1.3.1)** |  | 20d | 2007-04-02 | 2007-04-27 |  | 123d |  |  | Patrick; BAH | 480h |
| 273 | 2.2.2.1 | Update risk matrix for week 1 |  | 5d | 2007-04-02 | 2007-04-06 |  | 100d | 0d |  | Patrick | 40h |
| 274 | 2.2.2.2 | Update risk matrix for week 2 |  | 5d | 2007-04-09 | 2007-04-13 | 273 | 100d | 0d |  | Patrick | 40h |
| 275 | 2.2.2.3 | Deliver risk matrix to BAH (task 1.3.1) | milestone | 0d | 2007-04-13 | 2007-04-13 | 274 | 100d | 0d |  | Patrick |  |
| 276 | 2.2.2.4 | BAH review risk matrix (task 1.3.1) |  | 10d | 2007-04-16 | 2007-04-27 | 275 | 110d |  |  | BAH | 80h |
| 277 | 2.2.3 | **Monthly report (task 1.3.1)** |  | 20d | 2007-04-16 | 2007-05-11 | 275 | 123d |  |  | Patrick; BAH | 480h |
| 278 | 2.2.3.1 | Update risk matrix for week 3 |  | 5d | 2007-04-16 | 2007-04-20 |  | 100d | 0d |  | Patrick | 40h |
| 279 | 2.2.3.2 | Update risk matrix for week 4 |  | 5d | 2007-04-23 | 2007-04-27 | 278 | 100d | 0d |  | Patrick | 40h |
| 280 | 2.2.3.3 | Deliver monthly report and risk matrix to BAH (task 1.3.1) | milestone | 0d | 2007-04-27 | 2007-04-27 | 279 | 100d | 0d |  | Patrick |  |
| 281 | 2.2.3.4 | BAH review monthly report and risk matrix (task 1.3.1) |  | 10d | 2007-04-30 | 2007-05-11 | 280 | 100d |  |  | BAH | 80h |

| ID | WBS | Task | Duration | Start | Finish | Predecessors | Total slack | Free slack | Resources | Work |
| --- | --- | --- | --- | --- | --- | --- | --- | --- | --- | --- |
| 282 | 2.3 | **Requirements and use cases** | 32d | 2007-04-02 | 2007-05-15 | 262 | 118d |  | Developers; Adopters; BAH | 4048h |
| 283 | 2.3.1 | **Create level 1 use cases and requirements** | 4d | 2007-04-02 | 2007-04-05 |  | 118d | 0d | Developers | 288h |
| 284 | 2.3.1.1 | **Level 1 use cases for eligibility** | 2d | 2007-04-02 | 2007-04-03 |  | 120d |  | Kruttik; Priyatam | 64h |
| 285 | 2.3.1.1.1 | Use case document (task 3.1.1) | 1d | 2007-04-02 | 2007-04-02 |  | 97d | 0d | Kruttik; Priyatam | 16h |
| 286 | 2.3.1.1.2 | Requirements document (3.2.1) | 1d | 2007-04-03 | 2007-04-03 | 285 | 97d |  | Kruttik; Priyatam | 16h |
| 287 | 2.3.1.2 | **Level 1 use cases for study personnel** | 2d | 2007-04-02 | 2007-04-03 |  | 120d |  | Priyatam; Kula | 64h |
| 288 | 2.3.1.2.1 | Use case document (task 3.1.1) | 1d | 2007-04-02 | 2007-04-02 |  | 97d | 0d | Priyatam; Kula | 16h |
| 289 | 2.3.1.2.2 | Requirements document (3.2.1) | 1d | 2007-04-03 | 2007-04-03 | 288 | 97d |  | Priyatam; Kula | 16h |
| 290 | 2.3.1.3 | **Level 1 use cases for registration management** | 2d | 2007-04-02 | 2007-04-03 |  | 120d |  | Ramakrishna | 32h |
| 291 | 2.3.1.3.1 | Use case document (task 3.1.1) | 1d | 2007-04-02 | 2007-04-02 |  | 97d | 0d | Ramakrishna | 8h |
| 292 | 2.3.1.3.2 | Requirements document (3.2.1) | 1d | 2007-04-03 | 2007-04-03 | 291 | 97d |  | Ramakrishna | 8h |
| 293 | 2.3.1.4 | **Level 1 use cases for multi-site study** | 4d | 2007-04-02 | 2007-04-05 |  | 118d |  | Manav | 64h |
| 294 | 2.3.1.4.1 | Use case document (task 3.1.1) | 2d | 2007-04-02 | 2007-04-03 |  | 95d | 0d | Manav | 16h |
| 295 | 2.3.1.4.2 | Requirements document (3.2.1) | 2d | 2007-04-04 | 2007-04-05 | 294 | 95d |  | Manav | 16h |
| 296 | 2.3.1.5 | **Level 1 use cases for C3D integration** | 2d | 2007-04-02 | 2007-04-03 |  | 120d |  | Manav | 32h |
| 297 | 2.3.1.5.1 | Use case document (task 3.1.1) | 1d | 2007-04-02 | 2007-04-02 |  | 97d | 0d | Manav | 8h |
| 298 | 2.3.1.5.2 | Requirements document (3.2.1) | 1d | 2007-04-03 | 2007-04-03 | 297 | 97d |  | Manav | 8h |
| 299 | 2.3.2 | **Update use case document (task 3.1.1, task 5.2.1)** | 9d | 2007-04-06 | 2007-04-18 | 283 | 121d | 0d | Developers; Adopters | 1416h |
| 300 | 2.3.2.1 | **Update eligibility use cases** | 9d | 2007-04-06 | 2007-04-18 |  | 121d |  | Kruttik; Adopters; Priyatam | 312h |
| 301 | 2.3.2.1.1 | Developer update | 2d | 2007-04-06 | 2007-04-09 |  | 98d | 0d | Kruttik; Priyatam | 32h |
| 302 | 2.3.2.1.2 | Adopter review | 5d | 2007-04-10 | 2007-04-16 | 301 | 98d | 0d | Adopters | 40h |
| 303 | 2.3.2.1.3 | Developer update | 1d | 2007-04-17 | 2007-04-17 | 302 | 98d | 0d | Kruttik; Priyatam | 16h |
| 304 | 2.3.2.1.4 | Adopter sign-off | 1d | 2007-04-18 | 2007-04-18 | 303 | 98d |  | Adopters | 8h |
| 305 | 2.3.2.2 | **Update study personnel use cases** | 9d | 2007-04-06 | 2007-04-18 |  | 121d |  | Priyatam; Adopters; Kula | 312h |
| 306 | 2.3.2.2.1 | Developer update | 2d | 2007-04-06 | 2007-04-09 |  | 98d | 0d | Priyatam; Kula | 32h |
| 307 | 2.3.2.2.2 | Adopter review | 5d | 2007-04-10 | 2007-04-16 | 306 | 98d | 0d | Adopters | 40h |
| 308 | 2.3.2.2.3 | Developer update | 1d | 2007-04-17 | 2007-04-17 | 307 | 98d | 0d | Priyatam; Kula | 16h |
| 309 | 2.3.2.2.4 | Adopter sign-off | 1d | 2007-04-18 | 2007-04-18 | 308 | 98d |  | Adopters | 8h |

| ID | WBS | Task | Duration | Start | Finish | Predecessors | Total slack | Free slack | Resources | Work |
| --- | --- | --- | --- | --- | --- | --- | --- | --- | --- | --- |
| 310 | 2.3.2.3 | **Update registration management use cases** | 9d | 2007-04-06 | 2007-04-18 |  | 121d |  | Ramakrishna; Adopters | 216h |
| 311 | 2.3.2.3.1 | Developer update | 2d | 2007-04-06 | 2007-04-09 |  | 98d | 0d | Ramakrishna | 16h |
| 312 | 2.3.2.3.2 | Adopter review | 5d | 2007-04-10 | 2007-04-16 | 311 | 98d | 0d | Adopters | 40h |
| 313 | 2.3.2.3.3 | Developer update | 1d | 2007-04-17 | 2007-04-17 | 312 | 98d | 0d | Ramakrishna | 8h |
| 314 | 2.3.2.3.4 | Adopter sign-off | 1d | 2007-04-18 | 2007-04-18 | 313 | 98d |  | Adopters | 8h |
| 315 | 2.3.2.4 | **Update multi-site trial use cases** | 9d | 2007-04-06 | 2007-04-18 |  | 121d |  | Manav; Adopters | 216h |
| 316 | 2.3.2.4.1 | Developer update | 2d | 2007-04-06 | 2007-04-09 |  | 98d | 0d | Manav | 16h |
| 317 | 2.3.2.4.2 | Adopter review | 5d | 2007-04-10 | 2007-04-16 | 316 | 98d | 0d | Adopters | 40h |
| 318 | 2.3.2.4.3 | Developer update | 1d | 2007-04-17 | 2007-04-17 | 317 | 98d | 0d | Manav | 8h |
| 319 | 2.3.2.4.4 | Adopter sign-off | 1d | 2007-04-18 | 2007-04-18 | 318 | 98d |  | Adopters | 8h |
| 320 | 2.3.2.5 | **Update C3D integration use cases** | 9d | 2007-04-06 | 2007-04-18 |  | 121d |  | Manav; Adopters | 216h |
| 321 | 2.3.2.5.1 | Developer update | 2d | 2007-04-06 | 2007-04-09 |  | 98d | 0d | Manav | 16h |
| 322 | 2.3.2.5.2 | Adopter review | 5d | 2007-04-10 | 2007-04-16 | 321 | 98d | 0d | Adopters | 40h |
| 323 | 2.3.2.5.3 | Developer update | 1d | 2007-04-17 | 2007-04-17 | 322 | 98d | 0d | Manav | 8h |
| 324 | 2.3.2.5.4 | Adopter sign-off | 1d | 2007-04-18 | 2007-04-18 | 323 | 98d |  | Adopters | 8h |
| 325 | 2.3.3 | **Update requirements document (task 3.2.1, task 5.3.1)** | 9d | 2007-04-19 | 2007-05-01 | 299 | 121d | 0d | Developers; Adopters | 1416h |
| 326 | 2.3.3.1 | **Update eligibility requirements** | 9d | 2007-04-19 | 2007-05-01 |  | 121d |  | Kruttik; Priyatam; Adopters | 312h |
| 327 | 2.3.3.1.1 | Developer update | 2d | 2007-04-19 | 2007-04-20 |  | 98d | 0d | Kruttik; Priyatam | 32h |
| 328 | 2.3.3.1.2 | Adopter review | 5d | 2007-04-23 | 2007-04-27 | 327 | 98d | 0d | Adopters | 40h |
| 329 | 2.3.3.1.3 | Developer update | 1d | 2007-04-30 | 2007-04-30 | 328 | 98d | 0d | Kruttik; Priyatam | 16h |
| 330 | 2.3.3.1.4 | Adopter sign-off | 1d | 2007-05-01 | 2007-05-01 | 329 | 98d |  | Adopters | 8h |
| 331 | 2.3.3.2 | **Update study personel requirements** | 9d | 2007-04-19 | 2007-05-01 |  | 121d |  | Priyatam; Adopters; Kula | 312h |
| 332 | 2.3.3.2.1 | Developer update | 2d | 2007-04-19 | 2007-04-20 |  | 98d | 0d | Priyatam; Kula | 32h |
| 333 | 2.3.3.2.2 | Adopter review | 5d | 2007-04-23 | 2007-04-27 | 332 | 98d | 0d | Adopters | 40h |
| 334 | 2.3.3.2.3 | Developer update | 1d | 2007-04-30 | 2007-04-30 | 333 | 98d | 0d | Priyatam; Kula | 16h |
| 335 | 2.3.3.2.4 | Adopter sign-off | 1d | 2007-05-01 | 2007-05-01 | 334 | 98d |  | Adopters | 8h |

| ID | WBS | Task | Type | Duration | Start | Finish | Predecessors | Total slack | Free slack | Resources | Work |
| --- | --- | --- | --- | --- | --- | --- | --- | --- | --- | --- | --- |
| 336 | 2.3.3.3 | **Update registration management requirements** |  | 9d | 2007-04-19 | 2007-05-01 |  | 121d |  | Ramakrishna; Adopters | 216h |
| 337 | 2.3.3.3.1 | Developer update |  | 2d | 2007-04-19 | 2007-04-20 |  | 98d | 0d | Ramakrishna | 16h |
| 338 | 2.3.3.3.2 | Adopter review |  | 5d | 2007-04-23 | 2007-04-27 | 337 | 98d | 0d | Adopters | 40h |
| 339 | 2.3.3.3.3 | Developer update |  | 1d | 2007-04-30 | 2007-04-30 | 338 | 98d | 0d | Ramakrishna | 8h |
| 340 | 2.3.3.3.4 | Adopter sign-off |  | 1d | 2007-05-01 | 2007-05-01 | 339 | 98d |  | Adopters | 8h |
| 341 | 2.3.3.4 | **Update multi-site trial requirements** |  | 9d | 2007-04-19 | 2007-05-01 |  | 121d |  | Manav; Adopters | 216h |
| 342 | 2.3.3.4.1 | Developer update |  | 2d | 2007-04-19 | 2007-04-20 |  | 98d | 0d | Manav | 16h |
| 343 | 2.3.3.4.2 | Adopter review |  | 5d | 2007-04-23 | 2007-04-27 | 342 | 98d | 0d | Adopters | 40h |
| 344 | 2.3.3.4.3 | Developer update |  | 1d | 2007-04-30 | 2007-04-30 | 343 | 98d | 0d | Manav | 8h |
| 345 | 2.3.3.4.4 | Adopter sign-off |  | 1d | 2007-05-01 | 2007-05-01 | 344 | 98d |  | Adopters | 8h |
| 346 | 2.3.3.5 | **Update C3D integration requirements** |  | 9d | 2007-04-19 | 2007-05-01 |  | 121d |  | Manav; Adopters | 216h |
| 347 | 2.3.3.5.1 | Developer update |  | 2d | 2007-04-19 | 2007-04-20 |  | 98d | 0d | Manav | 16h |
| 348 | 2.3.3.5.2 | Adopter review |  | 5d | 2007-04-23 | 2007-04-27 | 347 | 98d | 0d | Adopters | 40h |
| 349 | 2.3.3.5.3 | Developer update |  | 1d | 2007-04-30 | 2007-04-30 | 348 | 98d | 0d | Manav | 8h |
| 350 | 2.3.3.5.4 | Adopter sign-off |  | 1d | 2007-05-01 | 2007-05-01 | 349 | 98d |  | Adopters | 8h |
| 351 | 2.3.4 | Developer deliver use case document to BAH (task 3.1.1, task 5.2.1) | milestone | 0d | 2007-05-01 | 2007-05-01 | 325 | 98d | 0d | Patrick |  |
| 352 | 2.3.5 | BAH review use case document (task 3.1.1, task 5.2.1) |  | 10d | 2007-05-02 | 2007-05-15 | 351 | 98d |  | BAH | 80h |
| 353 | 2.3.6 | Developer deliver requirements document to BAH (task 3.2.1, task 5.3.1) | milestone | 0d | 2007-05-01 | 2007-05-01 | 325 | 98d | 0d | Patrick |  |
| 354 | 2.3.7 | BAH review requirements document (task 3.2.1, task 5.3.1) |  | 10d | 2007-05-02 | 2007-05-15 | 353 | 98d |  | BAH | 80h |
| 355 | 2.4 | **Analysis and Design** |  | 31d | 2007-04-06 | 2007-05-18 | 283, 262 | 118d |  | Developers; Adopters; BAH | 4048h |
| 356 | 2.4.1 | **Perform level 1 design** |  | 4d | 2007-04-06 | 2007-04-11 |  | 118d | 0d | Developers | 64h |
| 357 | 2.4.1.1 | Cursory BRIDG harmonization |  | 1d | 2007-04-06 | 2007-04-06 |  | 95d | 0d | Developers | 8h |
| 358 | 2.4.1.2 | Update implementation model |  | 1d | 2007-04-09 | 2007-04-09 | 357 | 95d | 0d | Developers | 8h |
| 359 | 2.4.1.3 | Cursory system design |  | 2d | 2007-04-10 | 2007-04-11 | 358 | 95d |  | Developers | 16h |

| ID | WBS | Task | Type | Duration | Start | Finish | Predecessors | Total slack | Free slack | Resources | Work |
| --- | --- | --- | --- | --- | --- | --- | --- | --- | --- | --- | --- |
| 360 | 2.4.2 | **Modeling (task 3.3.1)** |  | 27d | 2007-04-12 | 2007-05-18 | 356 | 118d |  | Developers; Adopters | 1080h |
| 361 | 2.4.2.1 | **Update model** |  | 6d | 2007-04-12 | 2007-04-19 |  | 118d | 0d | Developers | 240h |
| 362 | 2.4.2.1.1 | **BRIDG harmonization** |  | 3d | 2007-04-12 | 2007-04-16 | 356 | 118d | 0d |  | 96h |
| 363 | 2.4.2.1.1.1 | Harmonize Study model |  | 2d | 2007-04-12 | 2007-04-13 |  | 96d |  | Kruttik; Priyatam; Manav | 48h |
| 364 | 2.4.2.1.1.2 | Harmonize Personnel model |  | 3d | 2007-04-12 | 2007-04-16 |  | 95d |  | Ramakrishna | 24h |
| 365 | 2.4.2.1.1.3 | Harmonize Multi-site Study model |  | 3d | 2007-04-12 | 2007-04-16 |  | 95d |  | Manav | 24h |
| 366 | 2.4.2.1.2 | **Model implementation** |  | 3d | 2007-04-17 | 2007-04-19 | 362 | 118d |  |  | 96h |
| 367 | 2.4.2.1.2.1 | Implement Study model |  | 2d | 2007-04-17 | 2007-04-18 |  | 96d |  | Kruttik; Priyatam; Manav | 48h |
| 368 | 2.4.2.1.2.2 | Implement Personnel model |  | 3d | 2007-04-17 | 2007-04-19 |  | 95d |  | Ramakrishna | 24h |
| 369 | 2.4.2.1.2.3 | Implement Multi-site Study model |  | 3d | 2007-04-17 | 2007-04-19 |  | 95d |  | Manav | 24h |
| 370 | 2.4.2.2 | Adopter review |  | 5d | 2007-04-20 | 2007-04-26 | 361 | 95d | 0d | Adopters | 40h |
| 371 | 2.4.2.3 | **Update model** |  | 6d | 2007-04-27 | 2007-05-04 | 370 | 118d | 0d | Developers | 288h |
| 372 | 2.4.2.3.1 | **BRIDG harmonization** |  | 3d | 2007-04-27 | 2007-05-01 | 370 | 118d | 0d |  | 120h |
| 373 | 2.4.2.3.1.1 | Harmonize Study model |  | 3d | 2007-04-27 | 2007-05-01 |  | 95d |  | Kruttik; Priyatam; Manav | 72h |
| 374 | 2.4.2.3.1.2 | Harmonize Personnel model |  | 3d | 2007-04-27 | 2007-05-01 |  | 95d |  | Ramakrishna | 24h |
| 375 | 2.4.2.3.1.3 | Harmonize Multi-site Study model |  | 3d | 2007-04-27 | 2007-05-01 |  | 95d | 0d | Manav | 24h |
| 376 | 2.4.2.3.2 | **Model implementation** |  | 3d | 2007-05-02 | 2007-05-04 | 372, 375 | 118d |  |  | 120h |
| 377 | 2.4.2.3.2.1 | Implement Study model |  | 3d | 2007-05-02 | 2007-05-04 |  | 95d |  | Kruttik; Priyatam; Manav | 72h |
| 378 | 2.4.2.3.2.2 | Implement Personnel model |  | 3d | 2007-05-02 | 2007-05-04 |  | 95d |  | Ramakrishna | 24h |
| 379 | 2.4.2.3.2.3 | Implement Multi-site Study model |  | 3d | 2007-05-02 | 2007-05-04 |  | 95d | 0d | Manav | 24h |
| 380 | 2.4.2.4 | Developer deliver UML to BAH (task 3.3.1) | milestone | 0d | 2007-05-04 | 2007-05-04 | 371, 379 | 95d | 0d | Patrick |  |
| 381 | 2.4.2.5 | BAH review of UML (task 3.3.1) |  | 10d | 2007-05-07 | 2007-05-18 | 380 | 95d |  | BAH | 80h |
| 382 | 2.4.3 | **System design (task 3.4.1)** |  | 25d | 2007-04-12 | 2007-05-16 | 356 | 120d |  | Developers; BAH | 2160h |
| 383 | 2.4.3.1 | **Design eligibility** |  | 15d | 2007-04-12 | 2007-05-02 |  | 120d | 0d | Kruttik; Priyatam | 480h |
| 384 | 2.4.3.1.1 | Draft UML |  | 5d | 2007-04-12 | 2007-04-18 |  | 97d | 0d | Kruttik; Priyatam | 80h |
| 385 | 2.4.3.1.2 | Team review |  | 5d | 2007-04-19 | 2007-04-25 | 384 | 97d | 0d | Kruttik; Priyatam | 80h |
| 386 | 2.4.3.1.3 | Update design document |  | 5d | 2007-04-26 | 2007-05-02 | 385 | 97d |  | Kruttik; Priyatam | 80h |

| ID | WBS | Task | Type | Duration | Start | Finish | Predecessors | Total slack | Free slack | Resources | Work |
| --- | --- | --- | --- | --- | --- | --- | --- | --- | --- | --- | --- |
| 387 | 2.4.3.2 | **Design personnel** |  | 15d | 2007-04-12 | 2007-05-02 |  | 120d | 0d | Priyatam; Kula | 480h |
| 388 | 2.4.3.2.1 | Draft UML |  | 5d | 2007-04-12 | 2007-04-18 |  | 97d | 0d | Priyatam; Kula | 80h |
| 389 | 2.4.3.2.2 | Team review |  | 5d | 2007-04-19 | 2007-04-25 | 388 | 97d | 0d | Priyatam; Kula | 80h |
| 390 | 2.4.3.2.3 | Update design document |  | 5d | 2007-04-26 | 2007-05-02 | 389 | 97d |  | Priyatam; Kula | 80h |
| 391 | 2.4.3.3 | **Design registration management** |  | 15d | 2007-04-12 | 2007-05-02 |  | 120d | 0d | Ramakrishna | 240h |
| 392 | 2.4.3.3.1 | Draft UML |  | 5d | 2007-04-12 | 2007-04-18 |  | 97d | 0d | Ramakrishna | 40h |
| 393 | 2.4.3.3.2 | Team review |  | 5d | 2007-04-19 | 2007-04-25 | 392 | 97d | 0d | Ramakrishna | 40h |
| 394 | 2.4.3.3.3 | Update design document |  | 5d | 2007-04-26 | 2007-05-02 | 393 | 97d |  | Ramakrishna | 40h |
| 395 | 2.4.3.4 | **Design multi-site study** |  | 15d | 2007-04-12 | 2007-05-02 |  | 120d | 0d | Manav | 240h |
| 396 | 2.4.3.4.1 | Draft UML |  | 5d | 2007-04-12 | 2007-04-18 |  | 97d | 0d | Manav | 40h |
| 397 | 2.4.3.4.2 | Team review |  | 5d | 2007-04-19 | 2007-04-25 | 396 | 97d | 0d | Manav | 40h |
| 398 | 2.4.3.4.3 | Update design document |  | 5d | 2007-04-26 | 2007-05-02 | 397 | 97d |  | Manav | 40h |
| 399 | 2.4.3.5 | **Design C3D integration** |  | 15d | 2007-04-12 | 2007-05-02 |  | 120d | 0d | Manav | 240h |
| 400 | 2.4.3.5.1 | Draft UML |  | 5d | 2007-04-12 | 2007-04-18 |  | 97d | 0d | Manav | 40h |
| 401 | 2.4.3.5.2 | Team review |  | 5d | 2007-04-19 | 2007-04-25 | 400 | 97d | 0d | Manav | 40h |
| 402 | 2.4.3.5.3 | Update design document |  | 5d | 2007-04-26 | 2007-05-02 | 401 | 97d |  | Manav | 40h |
| 403 | 2.4.3.6 | Deliver design doc to BAH (task 3.4.1) | milestone | 0d | 2007-05-02 | 2007-05-02 | 383, 387, 391, 395, 399 | 97d | 0d | Patrick |  |
| 404 | 2.4.3.7 | BAH review design doc (task 3.4.1) |  | 10d | 2007-05-03 | 2007-05-16 | 403 | 97d |  | BAH | 80h |
| 405 | 2.5 | **Implementation (task 3.5.1)** |  | 25d | 2007-04-12 | 2007-05-16 | 356, 262 | 119d |  | Developers; BAH | 2736h |
| 406 | 2.5.1 | **Database** |  | 3d | 2007-04-12 | 2007-04-16 |  | 119d | 0d | Developers | 216h |
| 407 | 2.5.1.1 | **Eligibility model** |  | 3d | 2007-04-12 | 2007-04-16 |  | 119d | 0d | Kruttik; Priyatam | 96h |
| 408 | 2.5.1.1.1 | Update DDLs |  | 1d | 2007-04-12 | 2007-04-12 |  | 96d | 0d | Kruttik; Priyatam | 16h |
| 409 | 2.5.1.1.2 | Apply to database |  | 1d | 2007-04-13 | 2007-04-13 | 408 | 96d | 0d | Kruttik; Priyatam | 16h |
| 410 | 2.5.1.1.3 | Create test data |  | 1d | 2007-04-16 | 2007-04-16 | 409 | 96d |  | Kruttik; Priyatam | 16h |

| ID | WBS | Task | Duration | Start | Finish | Predecessors | Total slack | Free slack | Resources | Work |
| --- | --- | --- | --- | --- | --- | --- | --- | --- | --- | --- |
| 411 | 2.5.1.2 | **Study personnel** | 3d | 2007-04-12 | 2007-04-16 |  | 120d | 0d | Ramakrishna | 48h |
| 412 | 2.5.1.2.1 | Update DDLs | 1d | 2007-04-12 | 2007-04-12 |  | 97d | 0d | Ramakrishna | 8h |
| 413 | 2.5.1.2.2 | Apply to database | 1d | 2007-04-13 | 2007-04-13 | 412 | 97d | 0d | Ramakrishna | 8h |
| 414 | 2.5.1.2.3 | Create test data | 1d | 2007-04-16 | 2007-04-16 | 413 | 97d |  | Ramakrishna | 8h |
| 415 | 2.5.1.3 | **Multi-site** | 3d | 2007-04-12 | 2007-04-16 |  | 120d | 0d | Manav | 48h |
| 416 | 2.5.1.3.1 | Update DDLs | 1d | 2007-04-12 | 2007-04-12 |  | 97d | 0d | Manav | 8h |
| 417 | 2.5.1.3.2 | Apply to database | 1d | 2007-04-13 | 2007-04-13 | 416 | 97d | 0d | Manav | 8h |
| 418 | 2.5.1.3.3 | Create test data | 1d | 2007-04-16 | 2007-04-16 | 417 | 97d |  | Manav | 8h |
| 419 | 2.5.2 | **Business layer** | 10d | 2007-04-17 | 2007-04-30 |  | 119d |  | Developers | 816h |
| 420 | 2.5.2.1 | **Implement eligibility APIs** | 7d | 2007-04-17 | 2007-04-25 | 407 | 119d | 0d | Kruttik; Priyatam | 224h |
| 421 | 2.5.2.1.1 | Update APIs | 2d | 2007-04-17 | 2007-04-18 |  | 96d | 0d | Kruttik; Priyatam | 32h |
| 422 | 2.5.2.1.2 | Implement APIs | 3d | 2007-04-19 | 2007-04-23 | 421 | 96d | 0d | Kruttik; Priyatam | 48h |
| 423 | 2.5.2.1.3 | Deploy APIs | 2d | 2007-04-24 | 2007-04-25 | 422 | 96d |  | Kruttik; Priyatam | 32h |
| 424 | 2.5.2.2 | **Implement study personnel APIs** | 6d | 2007-04-17 | 2007-04-24 | 411 | 120d | 0d | Ramakrishna | 96h |
| 425 | 2.5.2.2.1 | Update APIs | 2d | 2007-04-17 | 2007-04-18 |  | 97d | 0d | Ramakrishna | 16h |
| 426 | 2.5.2.2.2 | Implement APIs | 3d | 2007-04-19 | 2007-04-23 | 425 | 97d | 0d | Ramakrishna | 24h |
| 427 | 2.5.2.2.3 | Deploy APIs | 1d | 2007-04-24 | 2007-04-24 | 426 | 97d |  | Ramakrishna | 8h |
| 428 | 2.5.2.3 | **Implement C3PR registration APIs** | 6d | 2007-04-17 | 2007-04-24 | 415 | 120d | 0d | Manav | 96h |
| 429 | 2.5.2.3.1 | Update APIs | 2d | 2007-04-17 | 2007-04-18 |  | 97d | 0d | Manav | 16h |
| 430 | 2.5.2.3.2 | Implement APIs | 3d | 2007-04-19 | 2007-04-23 | 429 | 97d | 0d | Manav | 24h |
| 431 | 2.5.2.3.3 | Deploy APIs | 1d | 2007-04-24 | 2007-04-24 | 430 | 97d |  | Manav | 8h |
| 432 | 2.5.2.4 | **Implement import eligibility** | 10d | 2007-04-17 | 2007-04-30 | 407 | 132d |  | Kruttik; Priyatam | 320h |
| 433 | 2.5.2.4.1 | Import eligibility from a file | 5d | 2007-04-17 | 2007-04-23 |  | 109d | 0d | Kruttik; Priyatam | 80h |
| 434 | 2.5.2.4.2 | Import eligibility from the caDSR | 5d | 2007-04-24 | 2007-04-30 | 433 | 109d |  | Kruttik; Priyatam | 80h |

| ID | WBS | Task | Type | Duration | Start | Finish | Predecessors | Total slack | Free slack | Resources | Work |
| --- | --- | --- | --- | --- | --- | --- | --- | --- | --- | --- | --- |
| 435 | 2.5.3 | **ESB** |  | 5d | 2007-04-17 | 2007-04-23 | 406 | 137d |  | Manav | 80h |
| 436 | 2.5.3.1 | Implement binding components for C3D |  | 5d | 2007-04-17 | 2007-04-23 |  | 114d |  | Manav | 40h |
| 437 | 2.5.4 | **Security** |  | 5d | 2007-04-12 | 2007-04-18 |  | 140d |  | Ramakrishna; Manav | 240h |
| 438 | 2.5.4.1 | Connect C3PR roles to GridGrouper groups |  | 5d | 2007-04-12 | 2007-04-18 |  | 117d |  | Ramakrishna; Manav | 80h |
| 439 | 2.5.4.2 | Hook groups into authorization |  | 5d | 2007-04-12 | 2007-04-18 |  | 117d |  | Ramakrishna; Manav | 80h |
| 440 | 2.5.5 | **Web interface** |  | 15d | 2007-04-12 | 2007-05-02 |  | 119d | 0d | Developers | 904h |
| 441 | 2.5.5.1 | **Modify study management interface** |  | 6d | 2007-04-25 | 2007-05-02 |  | 119d |  | Kruttik; Priyatam; Manav | 384h |
| 442 | 2.5.5.1.1 | Manage eligibility criteria |  | 5d | 2007-04-26 | 2007-05-02 | 420 | 96d |  | Kruttik; Priyatam; Manav | 120h |
| 443 | 2.5.5.1.2 | Manage multi-site study |  | 5d | 2007-04-25 | 2007-05-01 | 428 | 97d |  | Kruttik; Priyatam; Manav | 120h |
| 444 | 2.5.5.2 | **Modify study personnel management interface** |  | 5d | 2007-04-25 | 2007-05-01 |  | 120d |  | Priyatam; Kula | 160h |
| 445 | 2.5.5.2.1 | Manage study personnel |  | 5d | 2007-04-25 | 2007-05-01 | 424 | 97d |  | Priyatam; Kula | 80h |
| 446 | 2.5.5.3 | **Modify registration interface** |  | 5d | 2007-04-26 | 2007-05-02 |  | 119d |  | Kruttik; Priyatam | 160h |
| 447 | 2.5.5.3.1 | Check eligibility |  | 5d | 2007-04-26 | 2007-05-02 | 420 | 96d | 0d | Kruttik; Priyatam | 80h |
| 448 | 2.5.5.4 | **Modify registration management interface** |  | 5d | 2007-04-12 | 2007-04-18 |  | 129d |  | Ramakrishna | 80h |
| 449 | 2.5.5.4.1 | Manage study subject registration |  | 5d | 2007-04-12 | 2007-04-18 |  | 106d |  | Ramakrishna | 40h |
| 450 | 2.5.6 | Deliver codebase to BAH (task 3.5.1) | milestone | 0d | 2007-05-02 | 2007-05-02 | 406, 440, 447 | 96d | 0d | Patrick |  |
| 451 | 2.5.7 | BAH review codebase (task 3.5.1) |  | 10d | 2007-05-03 | 2007-05-16 | 450 | 97d |  | BAH | 80h |
| 452 | 2.6 | **Testing** |  | 34d | 2007-04-02 | 2007-05-17 | 262 | 119d |  | Developers; Adopters; BAH | 5272h |
| 453 | 2.6.1 | **Developer testing** |  | 34d | 2007-04-02 | 2007-05-17 |  | 119d |  | BAH; Adopters; Developers | 2160h |
| 454 | 2.6.1.1 | **Update developer test plan (task 3.6.1, task 5.4.1)** |  | 30d | 2007-04-02 | 2007-05-11 |  | 123d |  | Developers; Adopters; BAH | 960h |
| 455 | 2.6.1.1.1 | Developer draft |  | 5d | 2007-04-02 | 2007-04-06 |  | 100d | 0d | Developers | 40h |
| 456 | 2.6.1.1.2 | Adopter review |  | 5d | 2007-04-09 | 2007-04-13 | 455 | 100d | 0d | Adopters | 40h |
| 457 | 2.6.1.1.3 | Developer update |  | 5d | 2007-04-16 | 2007-04-20 | 456 | 100d | 0d | Developers | 40h |
| 458 | 2.6.1.1.4 | Adopter review and sign |  | 5d | 2007-04-23 | 2007-04-27 | 457 | 100d | 0d | Adopters | 40h |
| 459 | 2.6.1.1.5 | Deliver signed test plan to BAH (task 3.6.1, task 5.4.1) | milestone | 0d | 2007-04-27 | 2007-04-27 | 458 | 100d | 0d | Patrick |  |
| 460 | 2.6.1.1.6 | BAH review signed test plan (task 3.6.1, task 5.4.1) |  | 10d | 2007-04-30 | 2007-05-11 | 459 | 100d |  | BAH | 80h |

| ID | WBS | Task | Type | Duration | Start | Finish | Predecessors | Total slack | Free slack | Resources | Work |
| --- | --- | --- | --- | --- | --- | --- | --- | --- | --- | --- | --- |
| 461 | 2.6.1.2 | **Integration and system testing (task 3.8.1)** |  | 16d | 2007-04-26 | 2007-05-17 | 450FS-5d | 119d |  | Developers; BAH | 384h |
| 462 | 2.6.1.2.1 | Generate test data |  | 1d | 2007-04-26 | 2007-04-26 |  | 96d | 0d | Developers | 8h |
| 463 | 2.6.1.2.2 | Write tests |  | 3d | 2007-04-27 | 2007-05-01 | 462 | 96d | 0d | Developers | 24h |
| 464 | 2.6.1.2.3 | Validate tests |  | 1d | 2007-05-02 | 2007-05-02 | 463 | 96d | 0d | Developers | 8h |
| 465 | 2.6.1.2.4 | Generate test report |  | 1d | 2007-05-03 | 2007-05-03 | 464 | 96d | 0d | Developers | 8h |
| 466 | 2.6.1.2.5 | Deliver test report to BAH (task 3.8.1) | milestone | 0d | 2007-05-03 | 2007-05-03 | 465 | 96d | 0d | Patrick |  |
| 467 | 2.6.1.2.6 | BAH review test report (task 3.8.1) |  | 10d | 2007-05-04 | 2007-05-17 | 466 | 96d |  | BAH | 80h |
| 468 | 2.6.2 | **Adopter testing** |  | 30d | 2007-04-02 | 2007-05-11 |  | 123d |  | Adopters; Developers; BAH | 2296h |
| 469 | 2.6.2.1 | **Update adopter test plan (task 5.5.1)** |  | 30d | 2007-04-02 | 2007-05-11 |  | 123d |  | Adopters; Developers; BAH | 1000h |
| 470 | 2.6.2.1.1 | Adopter update test script |  | 5d | 2007-04-02 | 2007-04-06 |  | 100d | 0d | Adopters | 40h |
| 471 | 2.6.2.1.2 | Adopter update test approach |  | 5d | 2007-04-09 | 2007-04-13 | 470 | 100d | 0d | Adopters | 40h |
| 472 | 2.6.2.1.3 | Developer review |  | 5d | 2007-04-16 | 2007-04-20 | 471 | 100d | 0d | Patrick; Ram | 80h |
| 473 | 2.6.2.1.4 | Adopter update |  | 5d | 2007-04-23 | 2007-04-27 | 472 | 100d | 0d | Adopters | 40h |
| 474 | 2.6.2.1.5 | Developer deliver adopter test plan to BAH (task 5.5.1) | milestone | 0d | 2007-04-27 | 2007-04-27 | 473 | 100d | 0d | Patrick |  |
| 475 | 2.6.2.1.6 | BAH review adopter test plan (task 5.5.1) |  | 10d | 2007-04-30 | 2007-05-11 | 474 | 100d |  | BAH | 80h |
| 476 | 2.6.2.2 | **QA testing (task 5.6.1)** |  | 24d | 2007-04-09 | 2007-05-10 | 470 | 124d |  | Adopters; BAH | 576h |
| 477 | 2.6.2.2.1 | Adopter create test data |  | 5d | 2007-04-09 | 2007-04-13 |  | 101d | 0d | Adopters | 40h |
| 478 | 2.6.2.2.2 | Adopter perform test script |  | 5d | 2007-04-16 | 2007-04-20 | 477 | 101d | 0d | Adopters | 40h |
| 479 | 2.6.2.2.3 | Adopter document results |  | 2d | 2007-04-23 | 2007-04-24 | 478 | 101d | 0d | Adopters | 16h |
| 480 | 2.6.2.2.4 | Adopter log bugs |  | 2d | 2007-04-25 | 2007-04-26 | 479 | 101d | 0d | Adopters | 16h |
| 481 | 2.6.2.2.5 | Developer deliver adopter test report to BAH (task 5.6.1) | milestone | 0d | 2007-04-26 | 2007-04-26 | 479, 480 | 101d | 0d | Patrick |  |
| 482 | 2.6.2.2.6 | BAH review adopter test report (task 5.6.1) |  | 10d | 2007-04-27 | 2007-05-10 | 481 | 101d |  | BAH | 80h |
| 483 | 2.7 | **Documentation** |  | 15d | 2007-04-26 | 2007-05-16 | 262 | 120d |  | Developers; Adopters; BAH | 1656h |
| 484 | 2.7.1 | **Installation guide (task 3.10.1)** |  | 13d | 2007-04-30 | 2007-05-16 | 450FS-3d | 120d |  | Developers; BAH | 312h |
| 485 | 2.7.1.1 | Update installation guide |  | 3d | 2007-04-30 | 2007-05-02 |  | 97d | 0d | Developers | 24h |
| 486 | 2.7.1.2 | Deliver installation guide to BAH (task 3.10.1) | milestone | 0d | 2007-05-02 | 2007-05-02 | 485 | 97d | 0d | Patrick |  |
| 487 | 2.7.1.3 | BAH review of installation guide (task 3.10.1) |  | 10d | 2007-05-03 | 2007-05-16 | 486 | 97d |  | BAH | 80h |

| ID | WBS | Task | Type | Duration | Start | Finish | Predecessors | Total slack | Free slack | Constraint | Resources | Work |
| --- | --- | --- | --- | --- | --- | --- | --- | --- | --- | --- | --- | --- |
| 488 | 2.7.2 | **Administration guide (task 3.13.1)** |  | 13d | 2007-04-30 | 2007-05-16 | 450FS-3d | 120d |  |  | Developers; BAH | 312h |
| 489 | 2.7.2.1 | Update administration guide |  | 3d | 2007-04-30 | 2007-05-02 |  | 97d | 0d |  | Developers | 24h |
| 490 | 2.7.2.2 | Deliver administration guide to BAH (task 3.13.1) | milestone | 0d | 2007-05-02 | 2007-05-02 | 489 | 97d | 0d |  | Patrick |  |
| 491 | 2.7.2.3 | BAH review of administration guide (task 3.13.1) |  | 10d | 2007-05-03 | 2007-05-16 | 490 | 97d |  |  | BAH | 80h |
| 492 | 2.7.3 | **Release notes (task 3.14.1)** |  | 13d | 2007-04-30 | 2007-05-16 | 450FS-3d | 120d |  |  | Developers; BAH | 312h |
| 493 | 2.7.3.1 | Update release notes |  | 3d | 2007-04-30 | 2007-05-02 |  | 97d | 0d |  | Developers | 24h |
| 494 | 2.7.3.2 | Deliver release notes to BAH (task 3.14.1) | milestone | 0d | 2007-05-02 | 2007-05-02 | 493 | 97d | 0d |  | Patrick |  |
| 495 | 2.7.3.3 | BAH review of release notes (task 3.14.1) |  | 10d | 2007-05-03 | 2007-05-16 | 494 | 97d |  |  | BAH | 80h |
| 496 | 2.7.4 | **Adopter summary of C3PR (task 5.1.1)** |  | 15d | 2007-04-26 | 2007-05-16 | 450FS-5d | 120d |  |  | Adopters; BAH | 360h |
| 497 | 2.7.4.1 | Adopter update summary |  | 3d | 2007-04-26 | 2007-04-30 |  | 97d | 0d |  | Adopters | 24h |
| 498 | 2.7.4.2 | Developer review summary |  | 1d | 2007-05-01 | 2007-05-01 | 497 | 97d | 0d |  | Adopters | 8h |
| 499 | 2.7.4.3 | Adopter update summary |  | 1d | 2007-05-02 | 2007-05-02 | 498 | 97d | 0d |  | Adopters | 8h |
| 500 | 2.7.4.4 | Developer deliver C3PR summary to BAH (task 5.1.1) | milestone | 0d | 2007-05-02 | 2007-05-02 | 499 | 97d | 0d |  | Patrick |  |
| 501 | 2.7.4.5 | BAH review of C3PR summary (task 5.1.1) |  | 10d | 2007-05-03 | 2007-05-16 | 500 | 97d |  |  | BAH | 80h |
| 502 | 3 | **Iteration 3 (stratification, security, enrollment. multi-site study, study ammendments)** |  | 22d | 2007-05-02 | 2007-05-31 |  | 109d |  |  |  |  |
| 503 | 3.1 | Iteration start | milestone | 0d | 2007-05-02 | 2007-05-02 |  | 109d | 0d | start no earlier than 2007-05-02 |  |  |
| 504 | 3.2 | **Stratification** |  | 22d | 2007-05-02 | 2007-05-31 | 503 | 109d |  |  |  |  |
| 505 | 3.2.1 | First pass at stratification implementation |  | 22d | 2007-05-02 | 2007-05-31 |  | 86d |  |  |  |  |
| 506 | 3.3 | **Security** |  | 22d | 2007-05-02 | 2007-05-31 | 503 | 109d |  |  |  |  |
| 507 | 3.3.1 | Complete security implementation |  | 22d | 2007-05-02 | 2007-05-31 |  | 86d |  |  |  |  |
| 508 | 3.4 | **Enrollment** |  | 22d | 2007-05-02 | 2007-05-31 | 503 | 109d |  |  |  |  |
| 509 | 3.4.1 | **Enrollment details** |  | 22d | 2007-05-02 | 2007-05-31 | 503 | 109d |  |  |  |  |
| 510 | 3.4.1.1 | Treating MD |  | 22d | 2007-05-02 | 2007-05-31 |  | 86d |  |  |  |  |
| 511 | 3.4.1.2 | Disease |  | 22d | 2007-05-02 | 2007-05-31 |  | 86d |  |  |  |  |
| 512 | 3.4.1.3 | Compassionate |  | 22d | 2007-05-02 | 2007-05-31 |  | 86d |  |  |  |  |

| ID | WBS | Task | Type | Duration | Start | Finish | Predecessors | Total slack | Free slack | Constraint |
| --- | --- | --- | --- | --- | --- | --- | --- | --- | --- | --- |
| 513 | 3.4.2 | **Enrollment business rules** |  | 22d | 2007-05-02 | 2007-05-31 |  | 109d |  |  |
| 514 | 3.4.2.1 | Accrual ceilings |  | 22d | 2007-05-02 | 2007-05-31 |  | 86d |  |  |
| 515 | 3.4.2.2 | Notifications |  | 22d | 2007-05-02 | 2007-05-31 |  | 86d |  |  |
| 516 | 3.5 | **Multi-site study** |  | 22d | 2007-05-02 | 2007-05-31 | 503 | 109d |  |  |
| 517 | 3.5.1 | Complete multi-site study implementation |  | 22d | 2007-05-02 | 2007-05-31 |  | 86d |  |  |
| 518 | 3.6 | **Registration management** |  | 22d | 2007-05-02 | 2007-05-31 | 503 | 109d |  |  |
| 519 | 3.6.1 | Off study |  | 22d | 2007-05-02 | 2007-05-31 |  | 86d |  |  |
| 520 | 3.7 | **Study ammendments** |  | 22d | 2007-05-02 | 2007-05-31 | 503 | 109d |  |  |
| 521 | 3.7.1 | Change model, harmonize |  | 22d | 2007-05-02 | 2007-05-31 |  | 109d |  |  |
| 522 | 3.7.2 | Implement business rules |  | 22d | 2007-05-02 | 2007-05-31 |  | 109d |  |  |
| 523 | 4 | **Iteration 4 (stratification, enrollment, randomization, reporting, legacy systems)** |  | 21d | 2007-06-01 | 2007-06-29 |  | 88d |  |  |
| 524 | 4.1 | Iteration start | milestone | 0d | 2007-06-01 | 2007-06-01 |  | 88d | 0d | start no earlier than 2007-06-01 |
| 525 | 4.2 | **Stratification** |  | 21d | 2007-06-01 | 2007-06-29 | 524 | 88d |  |  |
| 526 | 4.2.1 | Finalize stratification implementation |  | 21d | 2007-06-01 | 2007-06-29 |  | 88d |  |  |
| 527 | 4.3 | **Enrollment** |  | 21d | 2007-06-01 | 2007-06-29 | 524 | 88d |  |  |
| 528 | 4.3.1 | **Enrollment details** |  | 21d | 2007-06-01 | 2007-06-29 |  | 88d |  |  |
| 529 | 4.3.1.1 | Finalize enrollment details |  | 21d | 2007-06-01 | 2007-06-29 |  | 88d |  |  |
| 530 | 4.3.2 | **Enrollment business rules** |  | 21d | 2007-06-01 | 2007-06-29 |  | 88d |  |  |
| 531 | 4.3.2.1 | Finalize enrollment business rules |  | 21d | 2007-06-01 | 2007-06-29 |  | 88d |  |  |
| 532 | 4.4 | **Randomization** |  | 21d | 2007-06-01 | 2007-06-29 | 524 | 88d |  |  |
| 533 | 4.4.1 | Begin interfacing with Randomization Hub |  | 21d | 2007-06-01 | 2007-06-29 |  | 88d |  |  |
| 534 | 4.4.2 | Randomization book |  | 21d | 2007-06-01 | 2007-06-29 |  | 88d |  |  |
| 535 | 4.5 | **Reporting** |  | 21d | 2007-06-01 | 2007-06-29 | 524 | 88d |  |  |
| 536 | 4.5.1 | Reporting interface |  | 21d | 2007-06-01 | 2007-06-29 |  | 88d |  |  |

| ID | WBS | Task | Type | Duration | Start | Finish | Predecessors | Total slack | Free slack | Constraint |
| --- | --- | --- | --- | --- | --- | --- | --- | --- | --- | --- |
| 537 | 4.6 | **Legacy systems** |  | 21d | 2007-06-01 | 2007-06-29 | 524 | 88d |  |  |
| 538 | 4.6.1 | Investigate legacy systems at Adopter sites |  | 21d | 2007-06-01 | 2007-06-29 |  | 88d |  |  |
| 539 | 4.6.2 | Investigate support of legacy systems (APIs, files, etc.) |  | 21d | 2007-06-01 | 2007-06-29 |  | 88d |  |  |
| 540 | 5 | **Iteration 5 (randomization, reporting, legacy systems, semantic integration, BRIDG)** |  | 22d | 2007-07-02 | 2007-07-31 |  | 66d |  |  |
| 541 | 5.1 | Iteration start | milestone | 0d | 2007-07-02 | 2007-07-02 |  | 66d | 0d | start no earlier than 2007-07-02 |
| 542 | 5.2 | Begin semantic integration with the caDSR and EVS |  | 22d | 2007-07-02 | 2007-07-31 | 541 | 66d |  |  |
| 543 | 5.3 | Begin BRIDG review |  | 22d | 2007-07-02 | 2007-07-31 | 541 | 66d |  |  |
| 544 | 5.4 | **Randomization** |  | 22d | 2007-07-02 | 2007-07-31 | 541 | 66d |  |  |
| 545 | 5.4.1 | Randomization email |  | 22d | 2007-07-02 | 2007-07-31 |  | 66d |  |  |
| 546 | 5.5 | **Reporting** |  | 22d | 2007-07-02 | 2007-07-31 | 541 | 66d |  |  |
| 547 | 5.5.1 | Storing reports |  | 22d | 2007-07-02 | 2007-07-31 |  | 66d |  |  |
| 548 | 5.6 | **Legacy systems** |  | 22d | 2007-07-02 | 2007-07-31 | 541 | 66d |  |  |
| 549 | 5.6.1 | Implement legacy support for adopters |  | 22d | 2007-07-02 | 2007-07-31 |  | 66d |  |  |
| 550 | 5.6.2 | Implement generic support for legacy systems |  | 22d | 2007-07-02 | 2007-07-31 |  | 66d |  |  |
| 551 | 6 | **Iteration 6 (randomization, reporting, legacy systems, semantic integration, BRIDG)** |  | 23d | 2007-08-01 | 2007-08-31 |  | 43d |  |  |
| 552 | 6.1 | Iteration start | milestone | 0d | 2007-08-01 | 2007-08-01 |  | 43d | 0d | start no earlier than 2007-08-01 |
| 553 | 6.2 | Complete semantic integration with the caDSR and EVS |  | 23d | 2007-08-01 | 2007-08-31 | 552 | 43d |  |  |
| 554 | 6.3 | Complete BRIDG review |  | 23d | 2007-08-01 | 2007-08-31 | 552 | 43d |  |  |
| 555 | 6.4 | **Randomization** |  | 23d | 2007-08-01 | 2007-08-31 | 552 | 43d |  |  |
| 556 | 6.4.1 | Randomization call-out |  | 23d | 2007-08-01 | 2007-08-31 |  | 43d |  |  |
| 557 | 6.5 | **Reporting** |  | 23d | 2007-08-01 | 2007-08-31 | 552 | 43d |  |  |
| 558 | 6.5.1 | Finalize reporting |  | 23d | 2007-08-01 | 2007-08-31 |  | 43d |  |  |
| 559 | 6.6 | **Legacy systems** |  | 23d | 2007-08-01 | 2007-08-31 | 552 | 43d |  |  |
| 560 | 6.6.1 | Finalize legacy systems |  | 23d | 2007-08-01 | 2007-08-31 |  | 43d |  |  |

| ID | WBS | Task | Type | Duration | Start | Finish | Predecessors | Total slack | Free slack | Constraint |
| --- | --- | --- | --- | --- | --- | --- | --- | --- | --- | --- |
| 561 | 7 | **Iteration 7 (installer, silver review)** |  | 20d | 2007-09-03 | 2007-09-28 |  | 23d |  |  |
| 562 | 7.1 | Iteration start | milestone | 0d | 2007-09-03 | 2007-09-03 |  | 23d | 0d | start no earlier than 2007-09-03 |
| 563 | 7.2 | Begin silver review |  | 20d | 2007-09-03 | 2007-09-28 | 562 | 23d |  |  |
| 564 | 8 | **Iteration 8 (silver review)** |  | 23d | 2007-10-01 | 2007-10-31 |  | 0d |  |  |
| 565 | 8.1 | Iteration start | milestone | 0d | 2007-10-01 | 2007-10-01 |  | 0d |  | start no earlier than 2007-10-01 |
| 566 | 8.2 | Complete silver review |  | 23d | 2007-10-01 | 2007-10-31 | 565 | 0d |  |  |
