# elaboration_project_plan

Schedule from MS Project, 2006-11-01 to 2007-02-28, A marks actual dates.
Duke University

## Calendars

- Standard: Mon-Fri 08:00-12:00, 13:00-17:00; Sat-Sun off.

## Schedule

| ID | WBS | Task | Duration | Start | Finish | Predecessors | Complete | Remaining | Total slack |
| --- | --- | --- | --- | --- | --- | --- | --- | --- | --- |
| 1 | 1 | **Iteration 1** | 32d | 2006-11-01 A | 2006-12-14 |  | 15% | 27.05d | 54d |
| 2 | 1.1 | **Project planning** | 32d | 2006-11-01 A | 2006-12-14 |  | 38% | 19.91d | 54d |
| 3 | 1.1.1 | Draft project plan (task 1.1) | 10d | 2006-11-01 A | 2006-11-14 A |  | 100% |  |  |
| 4 | 1.1.2 | Draft communication plan (task 1.2) | 13d | 2006-11-01 A | 2006-11-17 A |  | 100% |  |  |
| 5 | 1.1.3 | Draft risk matrix (task 1.4.1) | 10d | 2006-11-01 A | 2006-11-14 A |  | 100% |  |  |
| 6 | 1.1.4 | Update risk matrix (task 1.3.1) | 22d | 2006-11-15 | 2006-12-14 | 5 |  |  | 54d |
| 7 | 1.1.5 | Draft meeting notes from face-to-face (task 1.5) | 18d | 2006-11-01 A | 2006-11-24 A |  | 100% |  |  |
| 8 | 1.1.6 | Refine vision and scope document (task 1.8) | 18d | 2006-11-01 | 2006-11-24 |  |  |  | 68d |
| 9 | 1.1.7 | Monthly report (task 1.3.1) | 22d | 2006-11-01 | 2006-11-30 |  |  |  | 64d |
| 10 | 1.1.8 | Adoption Collaboration Report (task 1.7) | 22d | 2006-11-01 | 2006-11-30 |  |  |  | 64d |
| 11 | 1.2 | **Development artifacts** | 22d | 2006-11-01 | 2006-11-30 |  |  |  | 64d |
| 12 | 1.2.1 | **Use case document** | 22d | 2006-11-01 | 2006-11-30 |  |  |  | 64d |
| 13 | 1.2.1.1 | Draft level 1 use cases (task 2.1.1) | 22d | 2006-11-01 | 2006-11-30 |  |  |  | 64d |
| 14 | 1.2.2 | SRS document (task 2.2.1) | 22d | 2006-11-01 | 2006-11-30 |  |  |  | 64d |
| 15 | 1.2.3 | UML diagrams (task 2.3.1) | 22d | 2006-11-01 | 2006-11-30 |  |  |  | 64d |
| 16 | 1.2.4 | Design document (task 2.4.1) | 22d | 2006-11-01 | 2006-11-30 |  |  |  | 64d |
| 17 | 1.2.5 | Test plan document (task 2.6.1) | 22d | 2006-11-01 | 2006-11-30 |  |  |  | 64d |
| 18 | 1.2.6 | Prototype code (task 2.5.1) | 22d | 2006-11-01 | 2006-11-30 |  |  |  | 64d |
| 19 | 1.2.7 | Test report (task 2.7.1) | 22d | 2006-11-01 | 2006-11-30 |  |  |  | 64d |
| 20 | 1.3 | **Development** | 22d | 2006-11-01 A | 2006-11-30 |  | 12% | 19.36d | 64d |
| 21 | 1.3.1 | **Web interface** | 22d | 2006-11-01 | 2006-11-30 |  |  |  | 64d |
| 22 | 1.3.1.1 | Migrate v1 code into codebase | 22d | 2006-11-01 | 2006-11-30 |  |  |  | 64d |
| 23 | 1.3.2 | **Enterprise Service Bus** | 22d | 2006-11-01 A | 2006-11-30 |  | 50% | 11d | 64d |
| 24 | 1.3.2.1 | Evalutate technologies | 22d | 2006-11-01 A | 2006-11-30 A |  | 100% |  |  |
| 25 | 1.3.2.2 | Setup initial project | 22d | 2006-11-01 | 2006-11-30 |  |  |  | 64d |

| ID | WBS | Task | Duration | Start | Finish | Predecessors | Total slack | Free slack |
| --- | --- | --- | --- | --- | --- | --- | --- | --- |
| 26 | 1.3.3 | **Grid service** | 22d | 2006-11-01 | 2006-11-30 |  | 64d |  |
| 27 | 1.3.3.1 | Evaluate caGrid 1.0 service infrastructure | 7d | 2006-11-01 | 2006-11-09 |  | 64d | 0d |
| 28 | 1.3.3.2 | Create grid service skeleton | 15d | 2006-11-10 | 2006-11-30 | 27 | 64d |  |
| 29 | 1.3.4 | **Database** | 22d | 2006-11-01 | 2006-11-30 |  | 64d |  |
| 30 | 1.3.4.1 | Migrate v1 code into codebase | 15d | 2006-11-01 | 2006-11-21 |  | 64d | 0d |
| 31 | 1.3.4.2 | First draft of protocol database structure | 7d | 2006-11-22 | 2006-11-30 | 30 | 64d |  |
| 32 | 1.3.5 | **Domain model** | 22d | 2006-11-01 | 2006-11-30 |  | 64d |  |
| 33 | 1.3.5.1 | Migrate v1 code into codebase | 15d | 2006-11-01 | 2006-11-21 |  | 64d | 0d |
| 34 | 1.3.5.2 | First draft of protocol model | 7d | 2006-11-22 | 2006-11-30 | 33 | 64d |  |
| 35 | 1.3.5.3 | Harmonize protocol model with BRIDG | 7d | 2006-11-22 | 2006-11-30 | 33 | 64d |  |
| 36 | 1.3.6 | **Security** | 22d | 2006-11-01 | 2006-11-30 |  | 0d |  |
| 37 | 1.3.6.1 | Evaluate caGrid 1.0 security infrastructure | 22d | 2006-11-01 | 2006-11-30 |  | 0d |  |
| 38 | 1.3.7 | **Business layer** | 22d | 2006-11-01 | 2006-11-30 |  | 64d |  |
| 39 | 1.3.7.1 | Migrate v1 code | 22d | 2006-11-01 | 2006-11-30 |  | 64d |  |
| 40 | 2 | **Iteration 2** | 21d | 2006-12-01 | 2006-12-29 | 36, 1 | 0d |  |
| 41 | 2.1 | **Project planning** | 21d | 2006-12-01 | 2006-12-29 |  | 43d |  |
| 42 | 2.1.1 | Update risk matrix (task 1.4.2) | 11d | 2006-12-01 | 2006-12-15 |  | 43d | 0d |
| 43 | 2.1.2 | Update risk matrix (task 1.3.2) | 10d | 2006-12-18 | 2006-12-29 | 42 | 43d |  |
| 44 | 2.1.3 | Monthly report (task 1.3.2) | 21d | 2006-12-01 | 2006-12-29 |  | 43d |  |
| 45 | 2.1.4 | Adoption Collaboration Report (task 1.7) | 21d | 2006-12-01 | 2006-12-29 |  | 43d |  |
| 46 | 2.2 | **Development artifacts** | 21d | 2006-12-01 | 2006-12-29 |  | 43d |  |
| 47 | 2.2.1 | **Use case document** | 21d | 2006-12-01 | 2006-12-29 |  | 43d |  |
| 48 | 2.2.1.1 | Develop C3PR integration use cases (implementation) (task 2.1.2) | 21d | 2006-12-01 | 2006-12-29 |  | 43d |  |
| 49 | 2.2.1.2 | Develop Study Calendar integration use cases (implementation) (task 2.1.2) | 21d | 2006-12-01 | 2006-12-29 |  | 43d |  |
| 50 | 2.2.1.3 | Develop protocol management use cases (implementation) (task 2.1.2) | 21d | 2006-12-01 | 2006-12-29 |  | 43d |  |
| 51 | 2.2.2 | SRS document (task 2.2.2) | 21d | 2006-12-01 | 2006-12-29 |  | 43d |  |
| 52 | 2.2.3 | UML diagrams (task 2.3.2) | 21d | 2006-12-01 | 2006-12-29 |  | 43d |  |
| 53 | 2.2.4 | Design document (task 2.4.2) | 21d | 2006-12-01 | 2006-12-29 |  | 43d |  |
| 54 | 2.2.5 | Test plan document (task 2.6.2) | 21d | 2006-12-01 | 2006-12-29 |  | 43d |  |
| 55 | 2.2.6 | Prototype code (task 2.5.2) | 21d | 2006-12-01 | 2006-12-29 |  | 43d |  |
| 56 | 2.2.7 | Test report (task 2.7.2) | 21d | 2006-12-01 | 2006-12-29 |  | 43d |  |

| ID | WBS | Task | Duration | Start | Finish | Predecessors | Total slack | Free slack |
| --- | --- | --- | --- | --- | --- | --- | --- | --- |
| 57 | 2.3 | **Development** | 21d | 2006-12-01 | 2006-12-29 |  | 0d |  |
| 58 | 2.3.1 | **Web interface** | 21d | 2006-12-01 | 2006-12-29 |  | 43d |  |
| 59 | 2.3.1.1 | First pass at dynamic interface | 5d | 2006-12-01 | 2006-12-07 |  | 43d | 0d |
| 60 | 2.3.1.2 | Add registration tab | 16d | 2006-12-08 | 2006-12-29 | 59 | 43d |  |
| 61 | 2.3.1.3 | Add skeleton of protocol management section | 16d | 2006-12-08 | 2006-12-29 | 59 | 43d |  |
| 62 | 2.3.1.4 | Point login module to Dorian (IdP service) | 21d | 2006-12-01 | 2006-12-29 |  | 43d |  |
| 63 | 2.3.2 | **Enterprise Service Bus** | 21d | 2006-12-01 | 2006-12-29 |  | 43d |  |
| 64 | 2.3.2.1 | Implement protocol creation message router | 5d | 2006-12-01 | 2006-12-07 |  | 43d | 0d |
| 65 | 2.3.2.2 | Implement protocol creation message handler for C3PR | 6d | 2006-12-08 | 2006-12-15 | 64 | 43d | 0d |
| 66 | 2.3.2.3 | Implement protocol creation message handler for Study Calendar | 6d | 2006-12-08 | 2006-12-15 | 64 | 43d | 0d |
| 67 | 2.3.2.4 | Implement participant creation message router | 5d | 2006-12-18 | 2006-12-22 | 66, 65 | 43d | 0d |
| 68 | 2.3.2.5 | Implement participant creation message handler for C3PR | 5d | 2006-12-25 | 2006-12-29 | 67 | 43d |  |
| 69 | 2.3.2.6 | Implement participant creation message handler for Study Calendar | 5d | 2006-12-25 | 2006-12-29 | 67 | 43d |  |
| 70 | 2.3.3 | **Grid service** | 21d | 2006-12-01 | 2006-12-29 |  | 43d |  |
| 71 | 2.3.3.1 | Implement protocol creation service | 21d | 2006-12-01 | 2006-12-29 |  | 43d |  |
| 72 | 2.3.3.2 | Implement participant creation service | 21d | 2006-12-01 | 2006-12-29 |  | 43d |  |
| 73 | 2.3.4 | **Database** | 21d | 2006-12-01 | 2006-12-29 |  | 43d |  |
| 74 | 2.3.4.1 | Update database with protocol changes | 21d | 2006-12-01 | 2006-12-29 |  | 43d |  |
| 75 | 2.3.4.2 | Update database with participant changes | 21d | 2006-12-01 | 2006-12-29 |  | 43d |  |
| 76 | 2.3.5 | **Domain model** | 21d | 2006-12-01 | 2006-12-29 |  | 43d |  |
| 77 | 2.3.5.1 | Revise protocol model | 5d | 2006-12-01 | 2006-12-07 |  | 43d | 0d |
| 78 | 2.3.5.2 | First draft of participant model | 16d | 2006-12-08 | 2006-12-29 | 77 | 43d |  |
| 79 | 2.3.5.3 | Harmonize participant model with BRIDG | 16d | 2006-12-08 | 2006-12-29 | 77 | 43d |  |
| 80 | 2.3.6 | **Security** | 21d | 2006-12-01 | 2006-12-29 |  | 0d |  |
| 81 | 2.3.6.1 | Deploy Dorian | 16d | 2006-12-01 | 2006-12-22 |  | 0d |  |
| 82 | 2.3.6.2 | Setup Dorian users | 5d | 2006-12-25 | 2006-12-29 | 81 | 0d |  |

| ID | WBS | Task | Duration | Start | Finish | Predecessors | Total slack |
| --- | --- | --- | --- | --- | --- | --- | --- |
| 83 | 2.3.7 | **Business layer** | 21d | 2006-12-01 | 2006-12-29 |  | 43d |
| 84 | 2.3.7.1 | Implement protocol creation service | 21d | 2006-12-01 | 2006-12-29 |  | 43d |
| 85 | 2.3.7.2 | Implement participant creation service | 21d | 2006-12-01 | 2006-12-29 |  | 43d |
| 86 | 3 | **Iteration 3** | 23d? | 2007-01-01 | 2007-01-31 | 80 | 0d |
| 87 | 3.1 | **Project planning** | 23d | 2007-01-01 | 2007-01-31 |  | 0d |
| 88 | 3.1.1 | Update risk matrix | 10d | 2007-01-01 | 2007-01-12 |  | 13d |
| 89 | 3.1.2 | Update risk matrix | 23d | 2007-01-01 | 2007-01-31 |  | 0d |
| 90 | 3.1.3 | Monthly report | 23d | 2007-01-01 | 2007-01-31 |  | 0d |
| 91 | 3.1.4 | Adoption Collaboration Report | 23d | 2007-01-01 | 2007-01-31 |  | 0d |
| 92 | 3.2 | **Development artifacts** | 23d? | 2007-01-01 | 2007-01-31 |  | 0d |
| 93 | 3.2.1 | Use case document | 23d | 2007-01-01 | 2007-01-31 |  | 0d |
| 94 | 3.2.2 | SRS document | 23d | 2007-01-01 | 2007-01-31 |  | 0d |
| 95 | 3.2.3 | UML diagrams | 23d | 2007-01-01 | 2007-01-31 |  | 0d |
| 96 | 3.2.4 | Design document | 23d | 2007-01-01 | 2007-01-31 |  | 0d |
| 97 | 3.2.5 | Test plan document | 23d | 2007-01-01 | 2007-01-31 |  | 0d |
| 98 | 3.2.6 | Prototype code | 23d | 2007-01-01 | 2007-01-31 |  | 0d |
| 99 | 3.2.7 | Test report | 23d | 2007-01-01 | 2007-01-31 |  | 0d |
| 100 | 3.2.8 | Draft architecture guide | 1d? | 2007-01-01 | 2007-01-01 |  | 22d |
| 101 | 3.3 | **Development** | 23d | 2007-01-01 | 2007-01-31 |  | 0d |
| 102 | 3.3.1 | Web interface | 23d | 2007-01-01 | 2007-01-31 |  | 0d |
| 103 | 3.3.2 | **Enterprise Service Bus** | 23d | 2007-01-01 | 2007-01-31 |  | 0d |
| 104 | 3.3.2.1 | Implement registration change message | 23d | 2007-01-01 | 2007-01-31 |  | 0d |
| 105 | 3.3.3 | Grid service | 23d | 2007-01-01 | 2007-01-31 |  | 0d |
| 106 | 3.3.4 | Database | 23d | 2007-01-01 | 2007-01-31 |  | 0d |
| 107 | 3.3.5 | Domain model | 23d | 2007-01-01 | 2007-01-31 |  | 0d |

| ID | WBS | Task | Duration | Start | Finish | Predecessors | Total slack |
| --- | --- | --- | --- | --- | --- | --- | --- |
| 108 | 3.3.6 | **Security** | 23d | 2007-01-01 | 2007-01-31 |  | 0d |
| 109 | 3.3.6.1 | Implement CSM authorization in grid service | 23d | 2007-01-01 | 2007-01-31 |  | 0d |
| 110 | 3.3.6.2 | Implement grid grouper | 23d | 2007-01-01 | 2007-01-31 |  | 0d |
| 111 | 4 | **Iteration 4** | 20d | 2007-02-01 | 2007-02-28 | 86 | 0d |
| 112 | 4.1 | **Project planning** | 20d | 2007-02-01 | 2007-02-28 |  | 0d |
| 113 | 4.1.1 | Update risk matrix | 11d | 2007-02-01 | 2007-02-15 |  | 9d |
| 114 | 4.1.2 | Update risk matrix | 20d | 2007-02-01 | 2007-02-28 |  | 0d |
| 115 | 4.1.3 | Monthly report | 20d | 2007-02-01 | 2007-02-28 |  | 0d |
| 116 | 4.1.4 | Construction and transition phase plan | 20d | 2007-02-01 | 2007-02-28 |  | 0d |
| 117 | 4.1.5 | Adoption Collaboration Report | 20d | 2007-02-01 | 2007-02-28 |  | 0d |
| 118 | 4.2 | **Development artifacts** | 20d | 2007-02-01 | 2007-02-28 |  | 0d |
| 119 | 4.2.1 | Use case document | 20d | 2007-02-01 | 2007-02-28 |  | 0d |
| 120 | 4.2.2 | SRS document | 20d | 2007-02-01 | 2007-02-28 |  | 0d |
| 121 | 4.2.3 | UML diagrams | 20d | 2007-02-01 | 2007-02-28 |  | 0d |
| 122 | 4.2.4 | Design document | 20d | 2007-02-01 | 2007-02-28 |  | 0d |
| 123 | 4.2.5 | Test plan document | 20d | 2007-02-01 | 2007-02-28 |  | 0d |
| 124 | 4.2.6 | Prototype code | 20d | 2007-02-01 | 2007-02-28 |  | 0d |
| 125 | 4.2.7 | Test report | 20d | 2007-02-01 | 2007-02-28 |  | 0d |
| 126 | 4.2.8 | Lessons learned document | 20d | 2007-02-01 | 2007-02-28 |  | 0d |
| 127 | 4.2.9 | Final architecture guide | 20d | 2007-02-01 | 2007-02-28 |  | 0d |
